# ShawTrust_SD_Master_Plan_v0.2

How a schedule from MS Project changed from version to version. A marks actual dates.

## Version 1 (saved 2011-11-23)

| ID | WBS | Task | Duration | Start | Finish | Predecessors | Total float | Constraint |
| --- | --- | --- | --- | --- | --- | --- | --- | --- |
| 1 | 1 | **MockProject** | 614.6d | 2011-11-14 13:00 | 2014-03-24 08:48 |  | 0d |  |
| 2 | 1.1 | **Initiation** | 1d | 2011-11-18 08:00 | 2011-11-18 17:00 |  | 610.85d |  |
| 3 |  | Project kick-off & introduction | 0.25d | 2011-11-18 08:00 | 2011-11-18 10:00 |  | 19d |  |
| 4 |  | Preparation & Study overview requirements | 0.5d | 2011-11-18 10:00 | 2011-11-18 15:00 | 3 | 610.85d |  |
| 5 |  | Requirement brainstorming | 0.25d | 2011-11-18 15:00 | 2011-11-18 17:00 | 4 | 19d |  |
| 6 | 1.2 | **Create document & Learning** | 8.25d | 2011-11-22 08:00 | 2011-12-02 10:00 |  | 603.1d |  |
| 7 |  | Build up work flow for module: 6.1,6.6, 6.7, 6.8 | 1.5d | 2011-11-22 08:00 | 2011-11-23 12:00 | 5 | 609.85d | start no earlier than 2011-11-22 08:00 |
| 8 |  | Build up work flow for module: 6.2 | 1.5d | 2011-11-22 08:00 | 2011-11-23 12:00 |  | 609.85d | start no earlier than 2011-11-22 08:00 |
| 9 |  | Build up work flow for module: 6.3 | 1.5d | 2011-11-22 08:00 | 2011-11-23 12:00 |  | 609.85d | start no earlier than 2011-11-22 08:00 |
| 10 |  | Build up work flow for module: 6.4 | 1.5d | 2011-11-22 08:00 | 2011-11-23 12:00 |  | 609.85d | start no earlier than 2011-11-22 08:00 |
| 11 |  | Build up work flow for module: 6.5 | 1.5d | 2011-11-22 08:00 | 2011-11-23 12:00 |  | 608.35d | start no earlier than 2011-11-22 08:00 |
| 12 |  | Template for prototype | 1.5d | 2011-11-23 13:00 | 2011-11-24 17:00 | 11 | 608.1d | start no earlier than 2011-11-22 08:00 |
| 13 |  | Craete Q&A document, Rick and issues document | 0.5d | 2011-11-23 08:00 | 2011-11-23 12:00 |  | 607.85d | start no earlier than 2011-11-23 08:00 |
| 14 |  | Create prototype for module | 2d | 2011-11-23 13:00 | 2011-11-25 12:00 | 13 | 16d |  |
| 15 |  | Learning Spring dependency | 0.5d | 2011-11-23 08:00 | 2011-11-23 12:00 |  | 609.35d | start no earlier than 2011-11-23 08:00 |
| 16 |  | Leaning Hibernate | 0.5d | 2011-11-23 13:00 | 2011-11-23 17:00 | 15 | 17.5d |  |
| 17 |  | Create work flow document, project plan | 0.5d | 2011-11-23 08:00 | 2011-11-23 12:00 |  | 608.35d | start no earlier than 2011-11-23 08:00 |
| 18 |  | Build up prototype for module: 6.1,6.6, 6.7, 6.8 | 1.5d | 2011-11-25 08:00 | 2011-11-28 12:00 | 17 | 606.85d | start no earlier than 2011-11-25 08:00 |
| 19 |  | Build up prototype for module: 6.2 | 1.5d | 2011-11-24 08:00 | 2011-11-25 12:00 |  | 607.85d | start no earlier than 2011-11-24 08:00 |
| 20 |  | Build up prototype for module: 6.3 | 1.5d | 2011-11-24 08:00 | 2011-11-25 12:00 |  | 607.85d | start no earlier than 2011-11-24 08:00 |
| 21 |  | Build up prototype for module: 6.4 | 1.5d | 2011-11-24 08:00 | 2011-11-25 12:00 |  | 607.85d | start no earlier than 2011-11-24 08:00 |
| 22 |  | Build up prototype for module: 6.5 | 1.5d | 2011-11-24 08:00 | 2011-11-25 12:00 |  | 605.85d | start no earlier than 2011-11-24 08:00 |
| 23 |  | Learning Spring dependency | 2d | 2011-11-25 13:00 | 2011-11-29 12:00 | 22 | 14d | finish no earlier than 2011-11-28 17:00 |
| 24 |  | Learning Hibernate | 4d | 2011-11-25 08:00 | 2011-11-30 17:00 |  | 603.1d | start no earlier than 2011-11-25 08:00 |
| 25 |  | Demo hibernate | 0.5d | 2011-12-01 08:00 | 2011-12-01 12:00 | 24 | 602.85d |  |
| 26 |  | Demo spring | 0.25d | 2011-12-01 13:00 | 2011-12-01 15:00 | 25 | 602.85d |  |
| 27 |  | Design database | 0.5d | 2011-12-01 15:00 | 2011-12-02 10:00 | 26 | 603.1d |  |
| 28 |  | High level design | 0.5d | 2011-11-29 13:00 | 2011-11-29 17:00 |  | 605.35d | finish no earlier than 2011-11-29 17:00 |
| 29 | 1.3 | **Construction** | 614.6d | 2011-11-14 13:00 | 2014-03-24 08:48 |  | 0d |  |
| 30 | 1.3.1 | **Iteration 1 - Login, menu, contact, addresslookup** | 9d | 2011-11-30 08:00 | 2011-12-12 17:00 |  | 594.1d |  |
| 31 | 1.3.1.1 | **Logon-Logout, menu** | 3d | 2011-11-30 08:00 | 2011-12-02 17:00 |  | 600.1d |  |
| 32 |  | Class, Sequence digaram | 0.5d | 2011-11-30 13:00 | 2011-11-30 17:00 |  | 599.6d | start no earlier than 2011-11-30 13:00 |
| 33 |  | Pseudo-code | 0.5d | 2011-11-30 08:00 | 2011-11-30 12:00 |  | 602.6d | start no earlier than 2011-11-30 08:00 |
| 34 |  | Prepare for Unit testing | 0.1d | 2011-12-01 08:00 | 2011-12-01 08:48 |  | 600.1d | start no earlier than 2011-12-01 08:00 |
| 35 |  | Code | 1.3d | 2011-12-01 08:48 | 2011-12-02 11:12 | 34 | 600.1d |  |
| 36 |  | Self code review | 0.1d | 2011-12-02 11:12 | 2011-12-02 12:00 | 32, 35 | 600.1d |  |
| 37 |  | Peer code review | 0.1d | 2011-12-02 13:00 | 2011-12-02 13:48 | 36 | 600.1d |  |
| 38 |  | Prepare UT script | 0.2d | 2011-12-02 13:48 | 2011-12-02 15:24 | 37 | 600.1d |  |
| 39 |  | Perform UT and fix bug | 0.2d | 2011-12-02 15:24 | 2011-12-02 17:00 | 38 | 600.1d |  |
| 40 | 1.3.1.2 | **Contact** | 3d | 2011-12-05 08:00 | 2011-12-07 17:00 |  | 597.1d |  |
| 41 |  | Class, Sequence digaram | 0.5d | 2011-12-05 08:00 | 2011-12-05 12:00 | 32SS | 597.1d | start no earlier than 2011-12-05 08:00 |
| 42 |  | Pseudo-code | 0.5d | 2011-12-05 13:00 | 2011-12-05 17:00 | 41 | 597.1d |  |
| 43 |  | Prepare for Unit testing | 0.1d | 2011-12-06 08:00 | 2011-12-06 08:48 | 42 | 597.1d |  |
| 44 |  | Code | 1d | 2011-12-06 08:48 | 2011-12-07 08:48 | 43 | 597.1d |  |
| 45 |  | Self code review | 0.1d | 2011-12-07 08:48 | 2011-12-07 09:36 | 41, 44 | 597.1d |  |
| 46 |  | Peer code review | 0.1d | 2011-12-07 09:36 | 2011-12-07 10:24 | 45 | 597.1d |  |
| 47 |  | Prepare UT script | 0.3d | 2011-12-07 10:24 | 2011-12-07 13:48 | 46 | 597.1d |  |
| 48 |  | Perform UT and fix bug | 0.4d | 2011-12-07 13:48 | 2011-12-07 17:00 | 47 | 597.1d |  |
| 49 | 1.3.1.3 | **Address lookup** | 3d | 2011-12-08 08:00 | 2011-12-12 17:00 |  | 594.1d |  |
| 50 |  | Class, Sequence digaram | 0.5d | 2011-12-08 08:00 | 2011-12-08 12:00 | 32SS | 594.1d | start no earlier than 2011-12-08 08:00 |
| 51 |  | Pseudo-code | 0.5d | 2011-12-08 13:00 | 2011-12-08 17:00 | 50 | 594.1d |  |
| 52 |  | Prepare for Unit testing | 0.1d | 2011-12-09 08:00 | 2011-12-09 08:48 | 51 | 594.1d |  |
| 53 |  | Code | 1d | 2011-12-09 08:48 | 2011-12-12 08:48 | 52 | 594.1d |  |
| 54 |  | Self code review | 0.1d | 2011-12-12 08:48 | 2011-12-12 09:36 | 50, 53 | 594.1d |  |
| 55 |  | Peer code review | 0.1d | 2011-12-12 09:36 | 2011-12-12 10:24 | 54 | 594.1d |  |
| 56 |  | Prepare UT script | 0.3d | 2011-12-12 10:24 | 2011-12-12 13:48 | 55 | 594.1d |  |
| 57 |  | Perform UT and fix bug | 0.4d | 2011-12-12 13:48 | 2011-12-12 17:00 | 56 | 594.1d |  |
| 58 | 1.3.2 | **Iteration 2 - Organization Maintenance** | 12.5d | 2011-11-30 08:00 | 2011-12-16 12:00 |  | 590.6d |  |
| 59 | 1.3.2.1 | **Organization** | 3d | 2011-11-30 08:00 | 2011-12-02 17:00 |  | 600.1d |  |
| 60 |  | Class, Sequence digaram | 0.5d | 2011-11-30 08:00 | 2011-11-30 12:00 |  | 600.1d | start no earlier than 2011-11-30 08:00 |
| 61 |  | Pseudo-code | 0.5d | 2011-11-30 13:00 | 2011-11-30 17:00 | 60 | 600.1d |  |
| 62 |  | Prepare for Unit testing | 0.1d | 2011-12-01 08:00 | 2011-12-01 08:48 | 61 | 600.1d |  |
| 63 |  | Code | 1d | 2011-12-01 08:48 | 2011-12-02 08:48 | 62 | 600.1d |  |
| 64 |  | Self code review | 0.1d | 2011-12-02 08:48 | 2011-12-02 09:36 | 60, 63 | 600.1d |  |
| 65 |  | Peer code review | 0.1d | 2011-12-02 09:36 | 2011-12-02 10:24 | 64 | 600.1d |  |
| 66 |  | Prepare UT script | 0.3d | 2011-12-02 10:24 | 2011-12-02 13:48 | 65 | 600.1d |  |
| 67 |  | Perform UT and fix bug | 0.4d | 2011-12-02 13:48 | 2011-12-02 17:00 | 66 | 600.1d |  |
| 68 | 1.3.2.2 | **Supporting Materials** | 3d | 2011-12-05 08:00 | 2011-12-07 17:00 |  | 597.1d |  |
| 69 |  | Class, Sequence digaram | 0.5d | 2011-12-05 08:00 | 2011-12-05 12:00 | 60SS | 597.1d | start no earlier than 2011-12-05 08:00 |
| 70 |  | Pseudo-code | 0.5d | 2011-12-05 13:00 | 2011-12-05 17:00 | 69 | 597.1d |  |

| ID | WBS | Task | Duration | Start | Finish | Predecessors | Total float | Constraint |
| --- | --- | --- | --- | --- | --- | --- | --- | --- |
| 71 |  | Prepare for Unit testing | 0.1d | 2011-12-06 08:00 | 2011-12-06 08:48 | 70 | 597.1d |  |
| 72 |  | Code | 1d | 2011-12-06 08:48 | 2011-12-07 08:48 | 71 | 597.1d |  |
| 73 |  | Self code review | 0.1d | 2011-12-07 08:48 | 2011-12-07 09:36 | 69, 72 | 597.1d |  |
| 74 |  | Peer code review | 0.1d | 2011-12-07 09:36 | 2011-12-07 10:24 | 73 | 597.1d |  |
| 75 |  | Prepare UT script | 0.3d | 2011-12-07 10:24 | 2011-12-07 13:48 | 74 | 597.1d |  |
| 76 |  | Perform UT and fix bug | 0.4d | 2011-12-07 13:48 | 2011-12-07 17:00 | 75 | 597.1d |  |
| 77 | 1.3.2.3 | **Directorates** | 3d | 2011-12-08 08:00 | 2011-12-12 17:00 |  | 594.1d |  |
| 78 |  | Class, Sequence digaram | 0.5d | 2011-12-08 08:00 | 2011-12-08 12:00 | 60SS | 594.1d | start no earlier than 2011-12-08 08:00 |
| 79 |  | Pseudo-code | 0.5d | 2011-12-08 13:00 | 2011-12-08 17:00 | 78 | 594.1d |  |
| 80 |  | Prepare for Unit testing | 0.1d | 2011-12-09 08:00 | 2011-12-09 08:48 | 79 | 594.1d |  |
| 81 |  | Code | 1d | 2011-12-09 08:48 | 2011-12-12 08:48 | 80 | 594.1d |  |
| 82 |  | Self code review | 0.1d | 2011-12-12 08:48 | 2011-12-12 09:36 | 78, 81 | 594.1d |  |
| 83 |  | Peer code review | 0.1d | 2011-12-12 09:36 | 2011-12-12 10:24 | 82 | 594.1d |  |
| 84 |  | Prepare UT script | 0.3d | 2011-12-12 10:24 | 2011-12-12 13:48 | 83 | 594.1d |  |
| 85 |  | Perform UT and fix bug | 0.4d | 2011-12-12 13:48 | 2011-12-12 17:00 | 84 | 594.1d |  |
| 86 | 1.3.2.4 | **Department** | 3d | 2011-12-13 13:00 | 2011-12-16 12:00 |  | 590.6d |  |
| 87 |  | Class, Sequence digaram | 0.5d | 2011-12-13 13:00 | 2011-12-13 17:00 | 60SS | 590.6d | start no earlier than 2011-12-13 13:00 |
| 88 |  | Pseudo-code | 0.5d | 2011-12-14 08:00 | 2011-12-14 12:00 | 87 | 590.6d |  |
| 89 |  | Prepare for Unit testing | 0.1d | 2011-12-14 13:00 | 2011-12-14 13:48 | 88 | 590.6d |  |
| 90 |  | Code | 1d | 2011-12-14 13:48 | 2011-12-15 13:48 | 89 | 590.6d |  |
| 91 |  | Self code review | 0.1d | 2011-12-15 13:48 | 2011-12-15 14:36 | 87, 90 | 590.6d |  |
| 92 |  | Peer code review | 0.1d | 2011-12-15 14:36 | 2011-12-15 15:24 | 91 | 590.6d |  |
| 93 |  | Prepare UT script | 0.3d | 2011-12-15 15:24 | 2011-12-16 08:48 | 92 | 590.6d |  |
| 94 |  | Perform UT and fix bug | 0.4d | 2011-12-16 08:48 | 2011-12-16 12:00 | 93 | 590.6d |  |
| 95 | 1.3.2.5 | **Team** | 3d | 2011-11-30 08:00 | 2011-12-02 17:00 |  | 600.1d |  |
| 96 |  | Class, Sequence digaram | 0.5d | 2011-11-30 08:00 | 2011-11-30 12:00 | 60SS | 600.1d |  |
| 97 |  | Pseudo-code | 0.5d | 2011-11-30 13:00 | 2011-11-30 17:00 | 96 | 600.1d |  |
| 98 |  | Prepare for Unit testing | 0.1d | 2011-12-01 08:00 | 2011-12-01 08:48 | 97 | 600.1d |  |
| 99 |  | Code | 1d | 2011-12-01 08:48 | 2011-12-02 08:48 | 98 | 600.1d |  |
| 100 |  | Self code review | 0.1d | 2011-12-02 08:48 | 2011-12-02 09:36 | 96, 99 | 600.1d |  |
| 101 |  | Peer code review | 0.1d | 2011-12-02 09:36 | 2011-12-02 10:24 | 100 | 600.1d |  |
| 102 |  | Prepare UT script | 0.3d | 2011-12-02 10:24 | 2011-12-02 13:48 | 101 | 600.1d |  |
| 103 |  | Perform UT and fix bug | 0.4d | 2011-12-02 13:48 | 2011-12-02 17:00 | 102 | 600.1d |  |
| 104 | 1.3.3 | **Iteration 3 - Services, Programme** | 6.5d | 2011-12-05 08:00 | 2011-12-13 12:00 |  | 593.6d |  |
| 105 | 1.3.3.1 | **Service** | 2.9d | 2011-12-05 08:00 | 2011-12-07 16:12 |  | 597.1d |  |
| 106 |  | Class, Sequence digaram | 0.5d | 2011-12-05 08:00 | 2011-12-05 12:00 |  | 597.1d | start no earlier than 2011-12-05 08:00 |
| 107 |  | Pseudo-code | 0.5d | 2011-12-05 13:00 | 2011-12-05 17:00 | 106 | 599d |  |
| 108 |  | Prepare for Unit testing | 0.1d | 2011-12-06 08:00 | 2011-12-06 08:48 | 107 | 599d |  |
| 109 |  | Code | 1d | 2011-12-06 08:00 | 2011-12-06 17:00 |  | 597.2d | start no earlier than 2011-12-06 08:00 |
| 110 |  | Self code review | 0.1d | 2011-12-07 08:00 | 2011-12-07 08:48 | 106, 109 | 597.2d |  |
| 111 |  | Peer code review | 0.1d | 2011-12-07 08:48 | 2011-12-07 09:36 | 110 | 597.2d |  |
| 112 |  | Prepare UT script | 0.3d | 2011-12-07 09:36 | 2011-12-07 12:00 | 111 | 597.2d |  |
| 113 |  | Perform UT and fix bug | 0.4d | 2011-12-07 13:00 | 2011-12-07 16:12 | 112 | 597.2d |  |
| 114 | 1.3.3.2 | **Programme** | 3d | 2011-12-08 13:00 | 2011-12-13 12:00 |  | 593.6d |  |
| 115 |  | Class, Sequence digaram | 0.5d | 2011-12-08 13:00 | 2011-12-08 17:00 | 106SS | 593.6d | start no earlier than 2011-12-08 13:00 |
| 116 |  | Pseudo-code | 0.5d | 2011-12-09 08:00 | 2011-12-09 12:00 | 115 | 593.6d |  |
| 117 |  | Prepare for Unit testing | 0.1d | 2011-12-09 13:00 | 2011-12-09 13:48 | 116 | 593.6d |  |
| 118 |  | Code | 1d | 2011-12-09 13:48 | 2011-12-12 13:48 | 117 | 593.6d |  |
| 119 |  | Self code review | 0.1d | 2011-12-12 13:48 | 2011-12-12 14:36 | 115, 118 | 593.6d |  |
| 120 |  | Peer code review | 0.1d | 2011-12-12 14:36 | 2011-12-12 15:24 | 119 | 593.6d |  |
| 121 |  | Prepare UT script | 0.3d | 2011-12-12 15:24 | 2011-12-13 08:48 | 120 | 593.6d |  |
| 122 |  | Perform UT and fix bug | 0.4d | 2011-12-13 08:48 | 2011-12-13 12:00 | 121 | 593.6d |  |
| 123 | 1.3.4 | **Iteration 4 -Trust Region, Trust District, Govermenet list, Type of Business lookup** | 614.6d | 2011-11-14 13:00 | 2014-03-24 08:48 |  | 0d |  |
| 124 | 1.3.4.1 | **Trust Region** | 3d | 2011-11-30 08:00 | 2011-12-02 17:00 |  | 3.5d |  |
| 125 |  | Class, Sequence digaram | 0.5d | 2011-11-30 08:00 | 2011-11-30 12:00 |  | 3.5d | start no earlier than 2011-11-30 08:00 |
| 126 |  | Pseudo-code | 0.5d | 2011-11-30 13:00 | 2011-11-30 17:00 | 125 | 600.1d |  |
| 127 |  | Prepare for Unit testing | 0.1d | 2011-12-01 08:00 | 2011-12-01 08:48 | 126 | 600.1d |  |
| 128 |  | Code | 1d | 2011-12-01 08:48 | 2011-12-02 08:48 | 127 | 600.1d |  |
| 129 |  | Self code review | 0.1d | 2011-12-02 08:48 | 2011-12-02 09:36 | 125, 128 | 600.1d |  |
| 130 |  | Peer code review | 0.1d | 2011-12-02 09:36 | 2011-12-02 10:24 | 129 | 600.1d |  |
| 131 |  | Prepare UT script | 0.3d | 2011-12-02 10:24 | 2011-12-02 13:48 | 130 | 600.1d |  |
| 132 |  | Perform UT and fix bug | 0.4d | 2011-12-02 13:48 | 2011-12-02 17:00 | 131 | 600.1d |  |
| 133 | 1.3.4.2 | **Trust District** | 599.6d | 2011-12-05 13:00 | 2014-03-24 08:48 |  | 0d |  |
| 134 |  | Class, Sequence digaram | 0.5d | 2011-12-05 13:00 | 2011-12-05 17:00 | 125SS | 0d | start no earlier than 2011-12-05 13:00 |
| 135 |  | Pseudo-code | 0.5d | 2011-12-06 08:00 | 2011-12-06 12:00 | 134 | 0d |  |
| 136 |  | Prepare for Unit testing | 0.1d | 2011-12-06 13:00 | 2011-12-06 13:48 | 135 | 0d |  |
| 137 |  | Code | 1d | 2011-12-06 13:48 | 2011-12-07 13:48 | 136 | 0d |  |
| 138 |  | Self code review | 1.1d | 2011-12-07 13:48 | 2014-03-21 10:24 | 134, 137 | 0d | start no earlier than 2009-08-21 08:00 |
| 139 |  | Peer code review | 0.1d | 2014-03-21 10:24 | 2014-03-21 11:12 | 138 | 0d |  |
| 140 |  | Prepare UT script | 0.3d | 2014-03-21 11:12 | 2014-03-21 14:36 | 139 | 0d |  |

| ID | WBS | Task | Duration | Start | Finish | Predecessors | Total float | Constraint |
| --- | --- | --- | --- | --- | --- | --- | --- | --- |
| 141 |  | Perform UT and fix bug | 0.4d | 2014-03-21 14:36 | 2014-03-24 08:48 | 140 | 0d | start no earlier than 2011-12-07 15:24 |
| 142 | 1.3.4.3 | **Gov Office** | 24.02d | 2011-11-14 13:00 | 2011-12-16 13:09 |  | 590.58d |  |
| 143 |  | Class, Sequence digaram | 0.5d | 2011-12-08 08:00 | 2011-12-08 12:00 | 125SS | 594.1d | start no earlier than 2011-12-08 08:00 |
| 144 |  | Pseudo-code | 0.5d | 2011-12-08 13:00 | 2011-12-08 17:00 | 143 | 594.1d |  |
| 145 |  | Prepare for Unit testing | 0.1d | 2011-12-09 08:00 | 2011-12-09 08:48 | 144 | 594.1d |  |
| 146 |  | Code | 1d | 2011-12-09 08:48 | 2011-12-12 08:48 | 145 | 594.1d |  |
| 147 |  | Self code review | 0.1d | 2011-12-12 08:48 | 2011-12-12 09:36 | 143, 146 | 594.1d |  |
| 148 |  | Peer code review | 0.1d | 2011-12-12 09:36 | 2011-12-12 10:24 | 147 | 594.1d |  |
| 149 |  | Prepare UT script | 0.3d | 2011-12-12 10:24 | 2011-12-12 13:48 | 148 | 594.1d |  |
| 150 |  | Perform UT and fix bug | 0.4d | 2011-12-12 13:48 | 2011-12-12 17:00 | 149 | 594.1d |  |
| 151 | 1.3.4.3.9 | **Type of Business lookup** | 24.02d | 2011-11-14 13:00 | 2011-12-16 13:09 |  | 590.58d |  |
| 152 |  | Class, Sequence digaram | 0.5d | 2011-11-14 13:00 | 2011-11-14 17:00 |  | 611.6d | start no earlier than 2011-11-14 13:00 |
| 153 |  | Pseudo-code | 0.5d | 2011-11-15 08:00 | 2011-11-15 12:00 | 152 | 611.6d |  |
| 154 |  | Prepare for Unit testing | 0.1d | 2011-11-15 13:00 | 2011-11-15 13:48 | 153 | 611.6d |  |
| 155 |  | Code | 1d | 2011-11-15 13:48 | 2011-11-16 13:48 | 154 | 611.6d |  |
| 156 |  | Self code review | 0.1d | 2011-11-16 13:48 | 2011-11-16 14:36 | 152, 155 | 611.6d |  |
| 157 |  | Peer code review | 0.1d | 2011-11-16 14:36 | 2011-11-16 15:24 | 156 | 611.6d |  |
| 158 |  | Prepare UT script | 0.3d | 2011-11-16 15:24 | 2011-11-17 08:48 | 157 | 611.6d |  |
| 159 |  | Perform UT and fix bug | 0.4d | 2011-11-17 08:48 | 2011-11-17 12:00 | 158 | 611.6d |  |
| 161 | 1.3.4.3.9.9 | **Iteration 5 -Premise, Facility, Volunteering, Minor Work Projects** | 12.52d | 2011-11-30 08:00 | 2011-12-16 13:09 |  | 590.58d |  |
| 162 | 1.3.4.3.9.9.1 | **Premise** | 3d | 2011-11-30 08:00 | 2011-12-02 17:00 |  | 600.08d |  |
| 163 |  | Class, Sequence digaram | 0.5d | 2011-11-30 08:00 | 2011-11-30 12:00 |  | 600.08d | start no earlier than 2011-11-30 08:00 |
| 164 |  | Pseudo-code | 0.5d | 2011-11-30 13:00 | 2011-11-30 17:00 | 163 | 600.1d |  |
| 165 |  | Prepare for Unit testing | 0.1d | 2011-12-01 08:00 | 2011-12-01 08:48 | 164 | 600.1d |  |
| 166 |  | Code | 1d | 2011-12-01 08:48 | 2011-12-02 08:48 | 165 | 600.1d |  |
| 167 |  | Self code review | 0.1d | 2011-12-02 08:48 | 2011-12-02 09:36 | 163, 166 | 600.1d |  |
| 168 |  | Peer code review | 0.1d | 2011-12-02 09:36 | 2011-12-02 10:24 | 167 | 600.1d |  |
| 169 |  | Prepare UT script | 0.3d | 2011-12-02 10:24 | 2011-12-02 13:48 | 168 | 600.1d |  |
| 170 |  | Perform UT and fix bug | 0.4d | 2011-12-02 13:48 | 2011-12-02 17:00 | 169 | 600.1d |  |
| 171 | 1.3.4.3.9.9.2 | **Facility** | 3d | 2011-12-05 08:00 | 2011-12-07 17:00 |  | 597.1d |  |
| 172 |  | Class, Sequence digaram | 0.5d | 2011-12-05 08:00 | 2011-12-05 12:00 | 163SS | 597.1d | start no earlier than 2011-12-05 08:00 |
| 173 |  | Pseudo-code | 0.5d | 2011-12-05 13:00 | 2011-12-05 17:00 | 172 | 597.1d |  |
| 174 |  | Prepare for Unit testing | 0.1d | 2011-12-06 08:00 | 2011-12-06 08:48 | 173 | 597.1d |  |
| 175 |  | Code | 1d | 2011-12-06 08:48 | 2011-12-07 08:48 | 174 | 597.1d |  |
| 176 |  | Self code review | 0.1d | 2011-12-07 08:48 | 2011-12-07 09:36 | 172, 175 | 597.1d |  |
| 177 |  | Peer code review | 0.1d | 2011-12-07 09:36 | 2011-12-07 10:24 | 176 | 597.1d |  |
| 178 |  | Prepare UT script | 0.3d | 2011-12-07 10:24 | 2011-12-07 13:48 | 177 | 597.1d |  |
| 179 |  | Perform UT and fix bug | 0.4d | 2011-12-07 13:48 | 2011-12-07 17:00 | 178 | 597.1d |  |
| 180 | 1.3.4.3.9.9.3 | **Volunteering** | 3d | 2011-12-08 08:00 | 2011-12-12 17:00 |  | 594.1d |  |
| 181 |  | Class, Sequence digaram | 0.5d | 2011-12-08 08:00 | 2011-12-08 12:00 | 163SS | 594.1d | start no earlier than 2011-12-08 08:00 |
| 182 |  | Pseudo-code | 0.5d | 2011-12-08 13:00 | 2011-12-08 17:00 | 181 | 594.1d |  |
| 183 |  | Prepare for Unit testing | 0.1d | 2011-12-09 08:00 | 2011-12-09 08:48 | 182 | 594.1d |  |
| 184 |  | Code | 1d | 2011-12-09 08:48 | 2011-12-12 08:48 | 183 | 594.1d |  |
| 185 |  | Self code review | 0.1d | 2011-12-12 08:48 | 2011-12-12 09:36 | 181, 184 | 594.1d |  |
| 186 |  | Peer code review | 0.1d | 2011-12-12 09:36 | 2011-12-12 10:24 | 185 | 594.1d |  |
| 187 |  | Prepare UT script | 0.3d | 2011-12-12 10:24 | 2011-12-12 13:48 | 186 | 594.1d |  |
| 188 |  | Perform UT and fix bug | 0.4d | 2011-12-12 13:48 | 2011-12-12 17:00 | 187 | 594.1d |  |
| 189 | 1.3.4.3.9.9.4 | **Minor Work Projects** | 3.02d | 2011-12-13 13:00 | 2011-12-16 13:09 |  | 590.58d |  |
| 190 |  | Class, Sequence digaram | 0.5d | 2011-12-13 13:00 | 2011-12-13 17:00 | 163SS | 590.58d | start no earlier than 2011-12-13 13:00 |
| 191 |  | Pseudo-code | 0.5d | 2011-12-14 08:00 | 2011-12-14 12:00 | 190 | 590.58d |  |
| 192 |  | Prepare for Unit testing | 0.1d | 2011-12-14 13:00 | 2011-12-14 13:48 | 191 | 590.58d |  |
| 193 |  | Code | 1d | 2011-12-14 13:48 | 2011-12-15 13:48 | 192 | 590.58d |  |
| 194 |  | Self code review | 0.1d | 2011-12-15 13:48 | 2011-12-15 14:36 | 190, 193 | 590.58d |  |
| 195 |  | Peer code review | 0.12d | 2011-12-15 14:36 | 2011-12-15 15:33 | 194 | 590.58d |  |
| 196 |  | Prepare UT script | 0.3d | 2011-12-15 15:33 | 2011-12-16 08:57 | 195 | 590.58d |  |
| 197 |  | Perform UT and fix bug | 0.4d | 2011-12-16 08:57 | 2011-12-16 13:09 | 196 | 590.58d |  |
| 199 | 1.4 | **Integrate modules** | 4d | 2011-12-19 08:00 | 2011-12-22 17:00 |  | 586.1d |  |
| 200 |  | Merge modules | 1d | 2011-12-19 08:00 | 2011-12-19 17:00 |  | 587.85d | start no earlier than 2011-12-19 08:00 |
| 201 |  | System test | 1.25d | 2011-12-20 08:00 | 2011-12-21 10:00 | 200 | 587.85d |  |
| 202 | 1.4.3 | **Help document** | 2d | 2011-12-21 08:00 | 2011-12-22 17:00 |  | 588.35d |  |
| 203 |  | Write help documents | 2d | 2011-12-21 08:00 | 2011-12-22 17:00 |  | 588.35d | start no earlier than 2011-12-21 08:00 |

## Version 2 (saved 2011-11-25)

Last finish 2014-03-24 → 2011-12-22 (-823d).

Added:

| ID | Task | Duration | Start | Finish |
| --- | --- | --- | --- | --- |
| 7 | **Build up work flow for module** | 2d | 2011-11-21 08:00 | 2011-11-22 17:00 |

Changed:

| ID | Task | Start | Finish | Duration | Total float | Predecessors | Other |
| --- | --- | --- | --- | --- | --- | --- | --- |
| 1 | **MockProject** | 2011-11-14 13:00 → 2011-11-18 08:00 (+4d) | 2014-03-24 08:48 → 2011-12-22 15:57 (-823d) | 614.6d → 24.87d |  |  |  |
| 6 | **Create document & Learning** | 2011-11-22 08:00 → 2011-11-21 08:00 (-1d) | 2011-12-02 10:00 → 2011-11-30 13:48 (-2d) | 8.25d → 7.6d | 603.1d → 0d |  |  |
| 8 | Build up work flow for module: 6.1,6.6, 6.7, 6.8 | 2011-11-22 08:00 → 2011-11-21 08:00 (-1d) | 2011-11-23 12:00 → 2011-11-22 12:00 (-1d) |  | 609.85d → 0d |  | constraint start no earlier than 2011-11-22 08:00 → none; resources none → nhanld |
| 9 | Build up work flow for module: 6.2 | 2011-11-22 08:00 → 2011-11-21 08:00 (-1d) | 2011-11-23 12:00 → 2011-11-22 17:00 (-1d) | 1.5d → 2d | 609.85d → 17.6d | none → 8SS | constraint start no earlier than 2011-11-22 08:00 → none |
| 10 | Build up work flow for module: 6.3 | 2011-11-22 08:00 → 2011-11-21 08:00 (-1d) | 2011-11-23 12:00 → 2011-11-22 12:00 (-1d) |  | 609.85d → 18.1d | none → 8SS | constraint start no earlier than 2011-11-22 08:00 → none |
| 11 | Build up work flow for module: 6.4 | 2011-11-22 08:00 → 2011-11-21 08:00 (-1d) | 2011-11-23 12:00 → 2011-11-22 12:00 (-1d) |  | 609.85d → 18.1d | none → 8SS | constraint start no earlier than 2011-11-22 08:00 → none |
| 12 | Build up work flow for module: 6.5 | 2011-11-22 08:00 → 2011-11-21 08:00 (-1d) | 2011-11-23 12:00 → 2011-11-22 12:00 (-1d) |  | 608.35d → 18.1d | none → 8SS | constraint start no earlier than 2011-11-22 08:00 → none |
| 13 | Template for prototype | 2011-11-23 13:00 → 2011-11-22 13:00 (-1d) | 2011-11-24 17:00 → 2011-11-23 17:00 (-1d) |  | 608.1d → 0d | 12 → 8, 12 | constraint start no earlier than 2011-11-22 08:00 → none; resources none → nhanld |
| 14 | Create Q&A document, Rick and issues document | 2011-11-23 08:00 → 2011-11-22 13:00 (-1d) | 2011-11-23 12:00 → 2011-11-22 17:00 (-1d) |  | 607.85d → 17.6d | none → 13SS | was named Craete Q&A document, Rick and issues document; constraint start no earlier than 2011-11-23 08:00 → none |
| 15 | Create project plan, integrate work flow | 2011-11-23 13:00 → 2011-11-22 13:00 (-1d) | 2011-11-25 12:00 → 2011-11-22 17:00 (-3d) | 2d → 0.5d | 16d → 17.6d | 14 → 13SS, 14 | was named Create prototype for module; resources none → hant21 |
| 16 | Learning Spring dependency | 2011-11-23 08:00 → 2011-11-22 13:00 (-1d) | 2011-11-23 12:00 → 2011-11-22 17:00 (-1d) |  | 609.35d → 17.6d | none → 13SS | constraint start no earlier than 2011-11-23 08:00 → none; resources dungnm → hungnm |
| 17 | Leaning Hibernate | 2011-11-23 13:00 → 2011-11-22 13:00 (-1d) | 2011-11-23 17:00 → 2011-11-22 17:00 (-1d) |  | 17.5d → 17.6d | 16 → 13SS, 16 |  |
| 18 | **Build up prototype** | 2011-11-23 08:00 → 2011-11-24 08:00 (+1d) | 2011-11-23 12:00 → 2011-11-25 12:00 (+2d) | 0.5d → 1.5d | 608.35d → 0d |  | was named Create work flow document, project plan; constraint start no earlier than 2011-11-23 08:00 → none; resources hant21 → none |
| 19 | Build up prototype for module: 6.1,6.6, 6.7, 6.8 | 2011-11-25 08:00 → 2011-11-24 08:00 (-1d) | 2011-11-28 12:00 → 2011-11-25 12:00 (-3d) |  | 606.85d → 0d | 18 → 13, 18 | constraint start no earlier than 2011-11-25 08:00 → none; resources none → nhanld |
| 20 | Build up prototype for module: 6.2 |  |  |  | 607.85d → 15.1d | none → 19SS | constraint start no earlier than 2011-11-24 08:00 → none |
| 21 | Build up prototype for module: 6.3 |  |  |  | 607.85d → 15.1d | none → 19SS | constraint start no earlier than 2011-11-24 08:00 → none |
| 22 | Build up prototype for module: 6.4 |  |  |  | 607.85d → 15.1d | none → 19SS | constraint start no earlier than 2011-11-24 08:00 → none |
| 23 | Build up prototype for module: 6.5 |  |  |  | 605.85d → 15.1d | none → 19SS | constraint start no earlier than 2011-11-24 08:00 → none |
| 24 | Learning Spring dependency |  |  |  | 14d → 0d | 23 → 19, 23 | constraint finish no earlier than 2011-11-28 17:00 → none |
| 25 | Learning Hibernate | 2011-11-25 08:00 → 2011-11-25 13:00 | 2011-11-30 17:00 → 2011-11-29 12:00 (-1d) | 4d → 2d | 603.1d → 13.1d | none → 24SS | constraint start no earlier than 2011-11-25 08:00 → none; resources hant21 → hant21; phongtv |
| 26 | Demo hibernate | 2011-12-01 08:00 → 2011-11-29 13:00 (-2d) | 2011-12-01 12:00 → 2011-11-29 15:00 (-2d) | 0.5d → 0.25d | 602.85d → 0d | 25 → 24, 25 | resources hant21 → hant21; phong |
| 27 | Demo spring | 2011-12-01 13:00 → 2011-11-29 15:00 (-2d) | 2011-12-01 15:00 → 2011-11-29 17:00 (-2d) |  | 602.85d → 0d |  |  |
| 28 | Design database | 2011-12-01 15:00 → 2011-11-30 08:00 (-1d) | 2011-12-02 10:00 → 2011-11-30 08:48 (-2d) | 0.5d → 0.1d | 603.1d → 0d |  | resources none → dungnm; hungnm; nhanld; phongtv; hant21 |
| 29 | High level design | 2011-11-29 13:00 → 2011-11-30 08:48 (+1d) | 2011-11-29 17:00 → 2011-11-30 13:48 (+1d) |  | 605.35d → 0d | none → 28 | constraint finish no earlier than 2011-11-29 17:00 → none; resources none → dungnm; hungnm; nhanld; phongtv; hant21 |
| 30 | **Construction** | 2011-11-14 13:00 → 2011-11-30 13:48 (+16d) | 2014-03-24 08:48 → 2011-12-16 13:57 (-829d) | 614.6d → 12.02d |  |  |  |
| 31 | **Iteration 1 - Login, menu, contact, addresslookup** | 2011-11-30 08:00 → 2011-11-30 13:48 | 2011-12-12 17:00 → 2011-12-13 13:48 (+1d) |  | 594.1d → 0d |  |  |
| 32 | **Logon-Logout, menu** | 2011-11-30 08:00 → 2011-11-30 13:48 | 2011-12-02 17:00 → 2011-12-05 13:48 (+3d) |  | 600.1d → 0d |  |  |
| 33 | Class, Sequence digaram | 2011-11-30 13:00 → 2011-11-30 13:48 | 2011-11-30 17:00 → 2011-12-01 08:48 (+1d) |  | 599.6d → 0d | none → 29 | constraint start no earlier than 2011-11-30 13:00 → none |
| 34 | Pseudo-code | 2011-11-30 08:00 → 2011-12-01 08:48 (+1d) | 2011-11-30 12:00 → 2011-12-01 13:48 (+1d) |  | 602.6d → 3d | none → 33 | constraint start no earlier than 2011-11-30 08:00 → none |
| 35 | Prepare for Unit testing | 2011-12-01 08:00 → 2011-12-01 13:48 | 2011-12-01 08:48 → 2011-12-01 14:36 |  | 600.1d → 3d | none → 34 | constraint start no earlier than 2011-12-01 08:00 → none |
| 36 | Code | 2011-12-01 08:48 → 2011-12-01 14:36 | 2011-12-02 11:12 → 2011-12-02 17:00 |  | 600.1d → 3d |  |  |
| 37 | Self code review | 2011-12-02 11:12 → 2011-12-05 08:00 (+3d) | 2011-12-02 12:00 → 2011-12-05 08:48 (+3d) |  | 600.1d → 7.27d | 33, 36 → 36 |  |
| 38 | Peer code review | 2011-12-02 13:00 → 2011-12-05 08:48 (+3d) | 2011-12-02 13:48 → 2011-12-05 09:36 (+3d) |  | 600.1d → 7.27d |  |  |
| 39 | Prepare UT script | 2011-12-02 13:48 → 2011-12-05 09:36 (+3d) | 2011-12-02 15:24 → 2011-12-05 11:12 (+3d) |  | 600.1d → 7.27d |  |  |
| 40 | Perform UT and fix bug | 2011-12-02 15:24 → 2011-12-05 11:12 (+3d) | 2011-12-02 17:00 → 2011-12-05 13:48 (+3d) |  | 600.1d → 7.27d |  |  |
| 41 | **Contact** | 2011-12-05 08:00 → 2011-12-05 13:48 | 2011-12-07 17:00 → 2011-12-08 13:48 (+1d) |  | 597.1d → 3d |  |  |
| 42 | Class, Sequence digaram | 2011-12-05 08:00 → 2011-12-05 13:48 | 2011-12-05 12:00 → 2011-12-06 08:48 (+1d) |  | 597.1d → 7.27d | 33SS → 40 | constraint start no earlier than 2011-12-05 08:00 → none |
| 43 | Pseudo-code | 2011-12-05 13:00 → 2011-12-06 08:48 (+1d) | 2011-12-05 17:00 → 2011-12-06 13:48 (+1d) |  | 597.1d → 7.27d |  |  |
| 44 | Prepare for Unit testing | 2011-12-06 08:00 → 2011-12-06 13:48 | 2011-12-06 08:48 → 2011-12-06 14:36 |  | 597.1d → 7.27d |  |  |
| 45 | Code | 2011-12-06 08:48 → 2011-12-06 14:36 | 2011-12-07 08:48 → 2011-12-07 14:36 |  | 597.1d → 7.27d |  |  |
| 46 | Self code review | 2011-12-07 08:48 → 2011-12-07 14:36 | 2011-12-07 09:36 → 2011-12-07 15:24 |  | 597.1d → 7.27d | 42, 45 → 45 |  |
| 47 | Peer code review | 2011-12-07 09:36 → 2011-12-07 15:24 | 2011-12-07 10:24 → 2011-12-07 16:12 |  | 597.1d → 7.27d |  |  |
| 48 | Prepare UT script | 2011-12-07 10:24 → 2011-12-07 16:12 | 2011-12-07 13:48 → 2011-12-08 09:36 (+1d) |  | 597.1d → 7.27d |  |  |
| 49 | Perform UT and fix bug | 2011-12-07 13:48 → 2011-12-08 09:36 (+1d) | 2011-12-07 17:00 → 2011-12-08 13:48 (+1d) |  | 597.1d → 7.27d |  |  |
| 50 | **Address lookup** | 2011-12-08 08:00 → 2011-12-08 13:48 | 2011-12-12 17:00 → 2011-12-13 13:48 (+1d) |  | 594.1d → 3d |  |  |
| 51 | Class, Sequence digaram | 2011-12-08 08:00 → 2011-12-08 13:48 | 2011-12-08 12:00 → 2011-12-09 08:48 (+1d) |  | 594.1d → 7.27d | 33SS → 49 | constraint start no earlier than 2011-12-08 08:00 → none |
| 52 | Pseudo-code | 2011-12-08 13:00 → 2011-12-09 08:48 (+1d) | 2011-12-08 17:00 → 2011-12-09 13:48 (+1d) |  | 594.1d → 7.27d |  |  |
| 53 | Prepare for Unit testing | 2011-12-09 08:00 → 2011-12-09 13:48 | 2011-12-09 08:48 → 2011-12-09 14:36 |  | 594.1d → 7.27d |  |  |
| 54 | Code | 2011-12-09 08:48 → 2011-12-09 14:36 | 2011-12-12 08:48 → 2011-12-12 14:36 |  | 594.1d → 7.27d |  |  |
| 55 | Self code review | 2011-12-12 08:48 → 2011-12-12 14:36 | 2011-12-12 09:36 → 2011-12-12 15:24 |  | 594.1d → 7.27d | 51, 54 → 54 |  |
| 56 | Peer code review | 2011-12-12 09:36 → 2011-12-12 15:24 | 2011-12-12 10:24 → 2011-12-12 16:12 |  | 594.1d → 7.27d |  |  |
| 57 | Prepare UT script | 2011-12-12 10:24 → 2011-12-12 16:12 | 2011-12-12 13:48 → 2011-12-13 09:36 (+1d) |  | 594.1d → 7.27d |  |  |
| 58 | Perform UT and fix bug | 2011-12-12 13:48 → 2011-12-13 09:36 (+1d) | 2011-12-12 17:00 → 2011-12-13 13:48 (+1d) |  | 594.1d → 7.27d |  |  |
| 59 | **Iteration 2 - Organization Maintenance** | 2011-11-30 08:00 → 2011-11-30 13:48 | 2011-12-16 12:00 → 2011-12-16 13:48 | 12.5d → 12d | 590.6d → 4.27d |  |  |
| 60 | **Organization** | 2011-11-30 08:00 → 2011-11-30 13:48 | 2011-12-02 17:00 → 2011-12-05 13:48 (+3d) |  | 600.1d → 4.27d |  |  |
| 61 | Class, Sequence digaram | 2011-11-30 08:00 → 2011-11-30 13:48 | 2011-11-30 12:00 → 2011-12-01 08:48 (+1d) |  | 600.1d → 4.27d | none → 33SS | constraint start no earlier than 2011-11-30 08:00 → none |
| 62 | Pseudo-code | 2011-11-30 13:00 → 2011-12-01 08:48 (+1d) | 2011-11-30 17:00 → 2011-12-01 13:48 (+1d) |  | 600.1d → 4.27d |  |  |
| 63 | Prepare for Unit testing | 2011-12-01 08:00 → 2011-12-01 13:48 | 2011-12-01 08:48 → 2011-12-01 14:36 |  | 600.1d → 4.27d |  |  |
| 64 | Code | 2011-12-01 08:48 → 2011-12-01 14:36 | 2011-12-02 08:48 → 2011-12-02 14:36 |  | 600.1d → 4.27d |  |  |
| 65 | Self code review | 2011-12-02 08:48 → 2011-12-02 14:36 | 2011-12-02 09:36 → 2011-12-02 15:24 |  | 600.1d → 4.27d | 61, 64 → 64 |  |
| 66 | Peer code review | 2011-12-02 09:36 → 2011-12-02 15:24 | 2011-12-02 10:24 → 2011-12-02 16:12 |  | 600.1d → 4.27d |  |  |
| 67 | Prepare UT script | 2011-12-02 10:24 → 2011-12-02 16:12 | 2011-12-02 13:48 → 2011-12-05 09:36 (+3d) |  | 600.1d → 4.27d |  |  |
| 68 | Perform UT and fix bug | 2011-12-02 13:48 → 2011-12-05 09:36 (+3d) | 2011-12-02 17:00 → 2011-12-05 13:48 (+3d) |  | 600.1d → 4.27d |  |  |
| 69 | **Supporting Materials** | 2011-12-05 08:00 → 2011-12-05 13:48 | 2011-12-07 17:00 → 2011-12-08 13:48 (+1d) |  | 597.1d → 4.27d |  |  |
| 70 | Class, Sequence digaram | 2011-12-05 08:00 → 2011-12-05 13:48 | 2011-12-05 12:00 → 2011-12-06 08:48 (+1d) |  | 597.1d → 4.27d | 61SS → 68 | constraint start no earlier than 2011-12-05 08:00 → none |
| 71 | Pseudo-code | 2011-12-05 13:00 → 2011-12-06 08:48 (+1d) | 2011-12-05 17:00 → 2011-12-06 13:48 (+1d) |  | 597.1d → 4.27d |  |  |
| 72 | Prepare for Unit testing | 2011-12-06 08:00 → 2011-12-06 13:48 | 2011-12-06 08:48 → 2011-12-06 14:36 |  | 597.1d → 4.27d |  |  |
| 73 | Code | 2011-12-06 08:48 → 2011-12-06 14:36 | 2011-12-07 08:48 → 2011-12-07 14:36 |  | 597.1d → 4.27d |  |  |
| 74 | Self code review | 2011-12-07 08:48 → 2011-12-07 14:36 | 2011-12-07 09:36 → 2011-12-07 15:24 |  | 597.1d → 4.27d | 70, 73 → 73 |  |
| 75 | Peer code review | 2011-12-07 09:36 → 2011-12-07 15:24 | 2011-12-07 10:24 → 2011-12-07 16:12 |  | 597.1d → 4.27d |  |  |

| ID | Task | Start | Finish | Duration | Total float | Predecessors | Other |
| --- | --- | --- | --- | --- | --- | --- | --- |
| 76 | Prepare UT script | 2011-12-07 10:24 → 2011-12-07 16:12 | 2011-12-07 13:48 → 2011-12-08 09:36 (+1d) |  | 597.1d → 4.27d |  |  |
| 77 | Perform UT and fix bug | 2011-12-07 13:48 → 2011-12-08 09:36 (+1d) | 2011-12-07 17:00 → 2011-12-08 13:48 (+1d) |  | 597.1d → 4.27d |  |  |
| 78 | **Directorates** | 2011-12-08 08:00 → 2011-12-08 13:48 | 2011-12-12 17:00 → 2011-12-13 13:48 (+1d) |  | 594.1d → 4.27d |  |  |
| 79 | Class, Sequence digaram | 2011-12-08 08:00 → 2011-12-08 13:48 | 2011-12-08 12:00 → 2011-12-09 08:48 (+1d) |  | 594.1d → 4.27d | 61SS → 77 | constraint start no earlier than 2011-12-08 08:00 → none |
| 80 | Pseudo-code | 2011-12-08 13:00 → 2011-12-09 08:48 (+1d) | 2011-12-08 17:00 → 2011-12-09 13:48 (+1d) |  | 594.1d → 4.27d |  |  |
| 81 | Prepare for Unit testing | 2011-12-09 08:00 → 2011-12-09 13:48 | 2011-12-09 08:48 → 2011-12-09 14:36 |  | 594.1d → 4.27d |  |  |
| 82 | Code | 2011-12-09 08:48 → 2011-12-09 14:36 | 2011-12-12 08:48 → 2011-12-12 14:36 |  | 594.1d → 4.27d |  |  |
| 83 | Self code review | 2011-12-12 08:48 → 2011-12-12 14:36 | 2011-12-12 09:36 → 2011-12-12 15:24 |  | 594.1d → 4.27d | 79, 82 → 82 |  |
| 84 | Peer code review | 2011-12-12 09:36 → 2011-12-12 15:24 | 2011-12-12 10:24 → 2011-12-12 16:12 |  | 594.1d → 4.27d |  |  |
| 85 | Prepare UT script | 2011-12-12 10:24 → 2011-12-12 16:12 | 2011-12-12 13:48 → 2011-12-13 09:36 (+1d) |  | 594.1d → 4.27d |  |  |
| 86 | Perform UT and fix bug | 2011-12-12 13:48 → 2011-12-13 09:36 (+1d) | 2011-12-12 17:00 → 2011-12-13 13:48 (+1d) |  | 594.1d → 4.27d |  |  |
| 87 | **Department** | 2011-12-13 13:00 → 2011-12-13 13:48 | 2011-12-16 12:00 → 2011-12-16 13:48 |  | 590.6d → 4.27d |  |  |
| 88 | Class, Sequence digaram | 2011-12-13 13:00 → 2011-12-13 13:48 | 2011-12-13 17:00 → 2011-12-14 08:48 (+1d) |  | 590.6d → 4.27d | 61SS → 86 | constraint start no earlier than 2011-12-13 13:00 → none |
| 89 | Pseudo-code | 2011-12-14 08:00 → 2011-12-14 08:48 | 2011-12-14 12:00 → 2011-12-14 13:48 |  | 590.6d → 4.27d |  |  |
| 90 | Prepare for Unit testing | 2011-12-14 13:00 → 2011-12-14 13:48 | 2011-12-14 13:48 → 2011-12-14 14:36 |  | 590.6d → 4.27d |  |  |
| 91 | Code | 2011-12-14 13:48 → 2011-12-14 14:36 | 2011-12-15 13:48 → 2011-12-15 14:36 |  | 590.6d → 4.27d |  |  |
| 92 | Self code review | 2011-12-15 13:48 → 2011-12-15 14:36 | 2011-12-15 14:36 → 2011-12-15 15:24 |  | 590.6d → 4.27d | 88, 91 → 91 |  |
| 93 | Peer code review | 2011-12-15 14:36 → 2011-12-15 15:24 | 2011-12-15 15:24 → 2011-12-15 16:12 |  | 590.6d → 4.27d |  |  |
| 94 | Prepare UT script | 2011-12-15 15:24 → 2011-12-15 16:12 | 2011-12-16 08:48 → 2011-12-16 09:36 |  | 590.6d → 4.27d |  |  |
| 95 | Perform UT and fix bug | 2011-12-16 08:48 → 2011-12-16 09:36 | 2011-12-16 12:00 → 2011-12-16 13:48 |  | 590.6d → 4.27d |  |  |
| 96 | **Team** | 2011-11-30 08:00 → 2011-11-30 13:48 | 2011-12-02 17:00 → 2011-12-05 13:48 (+3d) |  | 600.1d → 7.27d |  |  |
| 97 | Class, Sequence digaram | 2011-11-30 08:00 → 2011-11-30 13:48 | 2011-11-30 12:00 → 2011-12-01 08:48 (+1d) |  | 600.1d → 7.27d | 61SS → 33SS |  |
| 98 | Pseudo-code | 2011-11-30 13:00 → 2011-12-01 08:48 (+1d) | 2011-11-30 17:00 → 2011-12-01 13:48 (+1d) |  | 600.1d → 7.27d |  |  |
| 99 | Prepare for Unit testing | 2011-12-01 08:00 → 2011-12-01 13:48 | 2011-12-01 08:48 → 2011-12-01 14:36 |  | 600.1d → 7.27d |  |  |
| 100 | Code | 2011-12-01 08:48 → 2011-12-01 14:36 | 2011-12-02 08:48 → 2011-12-02 14:36 |  | 600.1d → 7.27d |  |  |
| 101 | Self code review | 2011-12-02 08:48 → 2011-12-02 14:36 | 2011-12-02 09:36 → 2011-12-02 15:24 |  | 600.1d → 7.27d | 97, 100 → 100 |  |
| 102 | Peer code review | 2011-12-02 09:36 → 2011-12-02 15:24 | 2011-12-02 10:24 → 2011-12-02 16:12 |  | 600.1d → 7.27d |  |  |
| 103 | Prepare UT script | 2011-12-02 10:24 → 2011-12-02 16:12 | 2011-12-02 13:48 → 2011-12-05 09:36 (+3d) |  | 600.1d → 7.27d |  |  |
| 104 | Perform UT and fix bug | 2011-12-02 13:48 → 2011-12-05 09:36 (+3d) | 2011-12-02 17:00 → 2011-12-05 13:48 (+3d) |  | 600.1d → 7.27d |  |  |
| 105 | **Iteration 3 - Services, Programme** | 2011-12-05 08:00 → 2011-12-05 13:48 | 2011-12-13 12:00 → 2011-12-13 13:48 | 6.5d → 6d | 593.6d → 7.27d |  |  |
| 106 | **Service** | 2011-12-05 08:00 → 2011-12-05 13:48 | 2011-12-07 16:12 → 2011-12-08 13:48 (+1d) | 2.9d → 3d | 597.1d → 7.27d |  |  |
| 107 | Class, Sequence digaram | 2011-12-05 08:00 → 2011-12-05 13:48 | 2011-12-05 12:00 → 2011-12-06 08:48 (+1d) |  | 597.1d → 7.27d | none → 104 | constraint start no earlier than 2011-12-05 08:00 → none |
| 108 | Pseudo-code | 2011-12-05 13:00 → 2011-12-06 08:48 (+1d) | 2011-12-05 17:00 → 2011-12-06 13:48 (+1d) |  | 599d → 7.27d |  |  |
| 109 | Prepare for Unit testing | 2011-12-06 08:00 → 2011-12-06 13:48 | 2011-12-06 08:48 → 2011-12-06 14:36 |  | 599d → 7.27d |  |  |
| 110 | Code | 2011-12-06 08:00 → 2011-12-06 14:36 | 2011-12-06 17:00 → 2011-12-07 14:36 (+1d) |  | 597.2d → 7.27d | none → 109 | constraint start no earlier than 2011-12-06 08:00 → none |
| 111 | Self code review | 2011-12-07 08:00 → 2011-12-07 14:36 | 2011-12-07 08:48 → 2011-12-07 15:24 |  | 597.2d → 7.27d | 107, 110 → 110 |  |
| 112 | Peer code review | 2011-12-07 08:48 → 2011-12-07 15:24 | 2011-12-07 09:36 → 2011-12-07 16:12 |  | 597.2d → 7.27d |  |  |
| 113 | Prepare UT script | 2011-12-07 09:36 → 2011-12-07 16:12 | 2011-12-07 12:00 → 2011-12-08 09:36 (+1d) |  | 597.2d → 7.27d |  |  |
| 114 | Perform UT and fix bug | 2011-12-07 13:00 → 2011-12-08 09:36 (+1d) | 2011-12-07 16:12 → 2011-12-08 13:48 (+1d) |  | 597.2d → 7.27d |  |  |
| 115 | **Programme** | 2011-12-08 13:00 → 2011-12-08 13:48 | 2011-12-13 12:00 → 2011-12-13 13:48 |  | 593.6d → 7.27d |  |  |
| 116 | Class, Sequence digaram | 2011-12-08 13:00 → 2011-12-08 13:48 | 2011-12-08 17:00 → 2011-12-09 08:48 (+1d) |  | 593.6d → 7.27d | 107SS → 114 | constraint start no earlier than 2011-12-08 13:00 → none |
| 117 | Pseudo-code | 2011-12-09 08:00 → 2011-12-09 08:48 | 2011-12-09 12:00 → 2011-12-09 13:48 |  | 593.6d → 7.27d |  |  |
| 118 | Prepare for Unit testing | 2011-12-09 13:00 → 2011-12-09 13:48 | 2011-12-09 13:48 → 2011-12-09 14:36 |  | 593.6d → 7.27d |  |  |
| 119 | Code | 2011-12-09 13:48 → 2011-12-09 14:36 | 2011-12-12 13:48 → 2011-12-12 14:36 |  | 593.6d → 7.27d |  |  |
| 120 | Self code review | 2011-12-12 13:48 → 2011-12-12 14:36 | 2011-12-12 14:36 → 2011-12-12 15:24 |  | 593.6d → 7.27d | 116, 119 → 119 |  |
| 121 | Peer code review | 2011-12-12 14:36 → 2011-12-12 15:24 | 2011-12-12 15:24 → 2011-12-12 16:12 |  | 593.6d → 7.27d |  |  |
| 122 | Prepare UT script | 2011-12-12 15:24 → 2011-12-12 16:12 | 2011-12-13 08:48 → 2011-12-13 09:36 |  | 593.6d → 7.27d |  |  |
| 123 | Perform UT and fix bug | 2011-12-13 08:48 → 2011-12-13 09:36 | 2011-12-13 12:00 → 2011-12-13 13:48 |  | 593.6d → 7.27d |  |  |
| 124 | **Iteration 4 -Trust Region, Trust District, Govermenet list, Type of Business lookup** | 2011-11-14 13:00 → 2011-11-30 13:48 (+16d) | 2014-03-24 08:48 → 2011-12-16 13:48 (-829d) | 614.6d → 12d | 0d → 0.02d |  |  |
| 125 | **Trust Region** | 2011-11-30 08:00 → 2011-11-30 13:48 | 2011-12-02 17:00 → 2011-12-05 13:48 (+3d) |  | 3.5d → 0.02d |  |  |
| 126 | Class, Sequence digaram | 2011-11-30 08:00 → 2011-11-30 13:48 | 2011-11-30 12:00 → 2011-12-01 08:48 (+1d) |  | 3.5d → 0.02d | none → 33SS | constraint start no earlier than 2011-11-30 08:00 → none |
| 127 | Pseudo-code | 2011-11-30 13:00 → 2011-12-01 08:48 (+1d) | 2011-11-30 17:00 → 2011-12-01 13:48 (+1d) |  | 600.1d → 0.02d |  |  |
| 128 | Prepare for Unit testing | 2011-12-01 08:00 → 2011-12-01 13:48 | 2011-12-01 08:48 → 2011-12-01 14:36 |  | 600.1d → 0.02d |  |  |
| 129 | Code | 2011-12-01 08:48 → 2011-12-01 14:36 | 2011-12-02 08:48 → 2011-12-02 14:36 |  | 600.1d → 0.02d |  |  |
| 130 | Self code review | 2011-12-02 08:48 → 2011-12-02 14:36 | 2011-12-02 09:36 → 2011-12-02 15:24 |  | 600.1d → 4.27d | 126, 129 → 129 |  |
| 131 | Peer code review | 2011-12-02 09:36 → 2011-12-02 15:24 | 2011-12-02 10:24 → 2011-12-02 16:12 |  | 600.1d → 4.27d |  |  |
| 132 | Prepare UT script | 2011-12-02 10:24 → 2011-12-02 16:12 | 2011-12-02 13:48 → 2011-12-05 09:36 (+3d) |  | 600.1d → 4.27d |  |  |
| 133 | Perform UT and fix bug | 2011-12-02 13:48 → 2011-12-05 09:36 (+3d) | 2011-12-02 17:00 → 2011-12-05 13:48 (+3d) |  | 600.1d → 4.27d |  |  |
| 134 | **Trust District** | 2011-12-05 13:00 → 2011-12-05 13:48 | 2014-03-24 08:48 → 2011-12-08 13:48 (-837d) | 599.6d → 3d | 0d → 0.02d |  |  |
| 135 | Class, Sequence digaram | 2011-12-05 13:00 → 2011-12-05 13:48 | 2011-12-05 17:00 → 2011-12-06 08:48 (+1d) |  | 0d → 4.27d | 126SS → 133 | constraint start no earlier than 2011-12-05 13:00 → none |
| 136 | Pseudo-code | 2011-12-06 08:00 → 2011-12-06 08:48 | 2011-12-06 12:00 → 2011-12-06 13:48 |  | 0d → 4.27d |  |  |
| 137 | Prepare for Unit testing | 2011-12-06 13:00 → 2011-12-06 13:48 | 2011-12-06 13:48 → 2011-12-06 14:36 |  | 0d → 4.27d |  |  |
| 138 | Code | 2011-12-06 13:48 → 2011-12-06 14:36 | 2011-12-07 13:48 → 2011-12-07 14:36 |  | 0d → 4.27d |  |  |
| 139 | Self code review | 2011-12-07 13:48 → 2011-12-07 14:36 | 2014-03-21 10:24 → 2011-12-07 15:24 (-835d) | 1.1d → 0.1d | 0d → 0.02d | 135, 138 → 138 | constraint start no earlier than 2009-08-21 08:00 → none |
| 140 | Peer code review | 2014-03-21 10:24 → 2011-12-07 15:24 (-835d) | 2014-03-21 11:12 → 2011-12-07 16:12 (-835d) |  | 0d → 4.27d |  |  |
| 141 | Prepare UT script | 2014-03-21 11:12 → 2011-12-07 16:12 (-835d) | 2014-03-21 14:36 → 2011-12-08 09:36 (-834d) |  | 0d → 4.27d |  |  |
| 142 | Perform UT and fix bug | 2014-03-21 14:36 → 2011-12-08 09:36 (-834d) | 2014-03-24 08:48 → 2011-12-08 13:48 (-837d) |  | 0d → 4.27d |  | constraint start no earlier than 2011-12-07 15:24 → none |
| 143 | **Gov Office** | 2011-11-14 13:00 → 2011-12-08 13:48 (+24d) | 2011-12-16 13:09 → 2011-12-13 13:48 (-3d) | 24.02d → 3d | 590.58d → 0.02d |  |  |
| 144 | Class, Sequence digaram | 2011-12-08 08:00 → 2011-12-08 13:48 | 2011-12-08 12:00 → 2011-12-09 08:48 (+1d) |  | 594.1d → 4.27d | 126SS → 142 | constraint start no earlier than 2011-12-08 08:00 → none |
| 145 | Pseudo-code | 2011-12-08 13:00 → 2011-12-09 08:48 (+1d) | 2011-12-08 17:00 → 2011-12-09 13:48 (+1d) |  | 594.1d → 4.27d |  |  |

| ID | Task | Start | Finish | Duration | Total float | Predecessors | Other |
| --- | --- | --- | --- | --- | --- | --- | --- |
| 146 | Prepare for Unit testing | 2011-12-09 08:00 → 2011-12-09 13:48 | 2011-12-09 08:48 → 2011-12-09 14:36 |  | 594.1d → 4.27d |  |  |
| 147 | Code | 2011-12-09 08:48 → 2011-12-09 14:36 | 2011-12-12 08:48 → 2011-12-12 14:36 |  | 594.1d → 4.27d |  |  |
| 148 | Self code review | 2011-12-12 08:48 → 2011-12-12 14:36 | 2011-12-12 09:36 → 2011-12-12 15:24 |  | 594.1d → 4.27d | 144, 147 → 147 |  |
| 149 | Peer code review | 2011-12-12 09:36 → 2011-12-12 15:24 | 2011-12-12 10:24 → 2011-12-12 16:12 |  | 594.1d → 4.27d |  |  |
| 150 | Prepare UT script | 2011-12-12 10:24 → 2011-12-12 16:12 | 2011-12-12 13:48 → 2011-12-13 09:36 (+1d) |  | 594.1d → 4.27d |  |  |
| 151 | Perform UT and fix bug | 2011-12-12 13:48 → 2011-12-13 09:36 (+1d) | 2011-12-12 17:00 → 2011-12-13 13:48 (+1d) |  | 594.1d → 4.27d |  |  |
| 152 | **Type of Business lookup** | 2011-11-14 13:00 → 2011-12-13 13:48 (+29d) | 2011-12-16 13:09 → 2011-12-16 13:48 | 24.02d → 3d | 590.58d → 0.02d |  |  |
| 153 | Class, Sequence digaram | 2011-11-14 13:00 → 2011-12-13 13:48 (+29d) | 2011-11-14 17:00 → 2011-12-14 08:48 (+30d) |  | 611.6d → 4.27d | none → 151 | constraint start no earlier than 2011-11-14 13:00 → none |
| 154 | Pseudo-code | 2011-11-15 08:00 → 2011-12-14 08:48 (+29d) | 2011-11-15 12:00 → 2011-12-14 13:48 (+29d) |  | 611.6d → 4.27d |  |  |
| 155 | Prepare for Unit testing | 2011-11-15 13:00 → 2011-12-14 13:48 (+29d) | 2011-11-15 13:48 → 2011-12-14 14:36 (+29d) |  | 611.6d → 4.27d |  |  |
| 156 | Code | 2011-11-15 13:48 → 2011-12-14 14:36 (+29d) | 2011-11-16 13:48 → 2011-12-15 14:36 (+29d) |  | 611.6d → 4.27d |  |  |
| 157 | Self code review | 2011-11-16 13:48 → 2011-12-15 14:36 (+29d) | 2011-11-16 14:36 → 2011-12-15 15:24 (+29d) |  | 611.6d → 4.27d |  |  |
| 158 | Peer code review | 2011-11-16 14:36 → 2011-12-15 15:24 (+29d) | 2011-11-16 15:24 → 2011-12-15 16:12 (+29d) |  | 611.6d → 4.27d |  |  |
| 159 | Prepare UT script | 2011-11-16 15:24 → 2011-12-15 16:12 (+29d) | 2011-11-17 08:48 → 2011-12-16 09:36 (+29d) |  | 611.6d → 4.27d |  |  |
| 160 | Perform UT and fix bug | 2011-11-17 08:48 → 2011-12-16 09:36 (+29d) | 2011-11-17 12:00 → 2011-12-16 13:48 (+29d) |  | 611.6d → 4.27d |  |  |
| 161 | **Iteration 5 -Premise, Facility, Volunteering, Minor Work Projects** | 2011-11-30 08:00 → 2011-11-30 13:48 | 2011-12-16 13:09 → 2011-12-16 13:57 | 12.52d → 12.02d | 590.58d → 0d |  |  |
| 162 | **Premise** | 2011-11-30 08:00 → 2011-11-30 13:48 | 2011-12-02 17:00 → 2011-12-05 13:48 (+3d) |  | 600.08d → 0d |  |  |
| 163 | Class, Sequence digaram | 2011-11-30 08:00 → 2011-11-30 13:48 | 2011-11-30 12:00 → 2011-12-01 08:48 (+1d) |  | 600.08d → 0d | none → 33SS | constraint start no earlier than 2011-11-30 08:00 → none |
| 164 | Pseudo-code | 2011-11-30 13:00 → 2011-12-01 08:48 (+1d) | 2011-11-30 17:00 → 2011-12-01 13:48 (+1d) |  | 600.1d → 0d |  |  |
| 165 | Prepare for Unit testing | 2011-12-01 08:00 → 2011-12-01 13:48 | 2011-12-01 08:48 → 2011-12-01 14:36 |  | 600.1d → 0d |  |  |
| 166 | Code | 2011-12-01 08:48 → 2011-12-01 14:36 | 2011-12-02 08:48 → 2011-12-02 14:36 |  | 600.1d → 0d |  |  |
| 167 | Self code review | 2011-12-02 08:48 → 2011-12-02 14:36 | 2011-12-02 09:36 → 2011-12-02 15:24 |  | 600.1d → 0d |  |  |
| 168 | Peer code review | 2011-12-02 09:36 → 2011-12-02 15:24 | 2011-12-02 10:24 → 2011-12-02 16:12 |  | 600.1d → 0d |  |  |
| 169 | Prepare UT script | 2011-12-02 10:24 → 2011-12-02 16:12 | 2011-12-02 13:48 → 2011-12-05 09:36 (+3d) |  | 600.1d → 0d |  |  |
| 170 | Perform UT and fix bug | 2011-12-02 13:48 → 2011-12-05 09:36 (+3d) | 2011-12-02 17:00 → 2011-12-05 13:48 (+3d) |  | 600.1d → 0d |  |  |
| 171 | **Facility** | 2011-12-05 08:00 → 2011-12-05 13:48 | 2011-12-07 17:00 → 2011-12-08 13:48 (+1d) |  | 597.1d → 0d |  |  |
| 172 | Class, Sequence digaram | 2011-12-05 08:00 → 2011-12-05 13:48 | 2011-12-05 12:00 → 2011-12-06 08:48 (+1d) |  | 597.1d → 0d | 163SS → 170, 163SS | constraint start no earlier than 2011-12-05 08:00 → none |
| 173 | Pseudo-code | 2011-12-05 13:00 → 2011-12-06 08:48 (+1d) | 2011-12-05 17:00 → 2011-12-06 13:48 (+1d) |  | 597.1d → 0d |  |  |
| 174 | Prepare for Unit testing | 2011-12-06 08:00 → 2011-12-06 13:48 | 2011-12-06 08:48 → 2011-12-06 14:36 |  | 597.1d → 0d |  |  |
| 175 | Code | 2011-12-06 08:48 → 2011-12-06 14:36 | 2011-12-07 08:48 → 2011-12-07 14:36 |  | 597.1d → 0d |  |  |
| 176 | Self code review | 2011-12-07 08:48 → 2011-12-07 14:36 | 2011-12-07 09:36 → 2011-12-07 15:24 |  | 597.1d → 0d |  |  |
| 177 | Peer code review | 2011-12-07 09:36 → 2011-12-07 15:24 | 2011-12-07 10:24 → 2011-12-07 16:12 |  | 597.1d → 0d |  |  |
| 178 | Prepare UT script | 2011-12-07 10:24 → 2011-12-07 16:12 | 2011-12-07 13:48 → 2011-12-08 09:36 (+1d) |  | 597.1d → 0d |  |  |
| 179 | Perform UT and fix bug | 2011-12-07 13:48 → 2011-12-08 09:36 (+1d) | 2011-12-07 17:00 → 2011-12-08 13:48 (+1d) |  | 597.1d → 0d |  |  |
| 180 | **Volunteering** | 2011-12-08 08:00 → 2011-12-08 13:48 | 2011-12-12 17:00 → 2011-12-13 13:48 (+1d) |  | 594.1d → 0d |  |  |
| 181 | Class, Sequence digaram | 2011-12-08 08:00 → 2011-12-08 13:48 | 2011-12-08 12:00 → 2011-12-09 08:48 (+1d) |  | 594.1d → 0d | 163SS → 179, 163SS | constraint start no earlier than 2011-12-08 08:00 → none |
| 182 | Pseudo-code | 2011-12-08 13:00 → 2011-12-09 08:48 (+1d) | 2011-12-08 17:00 → 2011-12-09 13:48 (+1d) |  | 594.1d → 0d |  |  |
| 183 | Prepare for Unit testing | 2011-12-09 08:00 → 2011-12-09 13:48 | 2011-12-09 08:48 → 2011-12-09 14:36 |  | 594.1d → 0d |  |  |
| 184 | Code | 2011-12-09 08:48 → 2011-12-09 14:36 | 2011-12-12 08:48 → 2011-12-12 14:36 |  | 594.1d → 0d |  |  |
| 185 | Self code review | 2011-12-12 08:48 → 2011-12-12 14:36 | 2011-12-12 09:36 → 2011-12-12 15:24 |  | 594.1d → 0d |  |  |
| 186 | Peer code review | 2011-12-12 09:36 → 2011-12-12 15:24 | 2011-12-12 10:24 → 2011-12-12 16:12 |  | 594.1d → 0d |  |  |
| 187 | Prepare UT script | 2011-12-12 10:24 → 2011-12-12 16:12 | 2011-12-12 13:48 → 2011-12-13 09:36 (+1d) |  | 594.1d → 0d |  |  |
| 188 | Perform UT and fix bug | 2011-12-12 13:48 → 2011-12-13 09:36 (+1d) | 2011-12-12 17:00 → 2011-12-13 13:48 (+1d) |  | 594.1d → 0d |  |  |
| 189 | **Minor Work Projects** | 2011-12-13 13:00 → 2011-12-13 13:48 | 2011-12-16 13:09 → 2011-12-16 13:57 |  | 590.58d → 0d |  |  |
| 190 | Class, Sequence digaram | 2011-12-13 13:00 → 2011-12-13 13:48 | 2011-12-13 17:00 → 2011-12-14 08:48 (+1d) |  | 590.58d → 0d | 163SS → 188, 163SS | constraint start no earlier than 2011-12-13 13:00 → none |
| 191 | Pseudo-code | 2011-12-14 08:00 → 2011-12-14 08:48 | 2011-12-14 12:00 → 2011-12-14 13:48 |  | 590.58d → 0d |  |  |
| 192 | Prepare for Unit testing | 2011-12-14 13:00 → 2011-12-14 13:48 | 2011-12-14 13:48 → 2011-12-14 14:36 |  | 590.58d → 0d |  |  |
| 193 | Code | 2011-12-14 13:48 → 2011-12-14 14:36 | 2011-12-15 13:48 → 2011-12-15 14:36 |  | 590.58d → 0d |  |  |
| 194 | Self code review | 2011-12-15 13:48 → 2011-12-15 14:36 | 2011-12-15 14:36 → 2011-12-15 15:24 |  | 590.58d → 0d |  |  |
| 195 | Peer code review | 2011-12-15 14:36 → 2011-12-15 15:24 | 2011-12-15 15:33 → 2011-12-15 16:21 |  | 590.58d → 0d |  |  |
| 196 | Prepare UT script | 2011-12-15 15:33 → 2011-12-15 16:21 | 2011-12-16 08:57 → 2011-12-16 09:45 |  | 590.58d → 0d |  |  |
| 197 | Perform UT and fix bug | 2011-12-16 08:57 → 2011-12-16 09:45 | 2011-12-16 13:09 → 2011-12-16 13:57 |  | 590.58d → 0d |  |  |
| 199 | **Integrate modules** | 2011-12-19 08:00 → 2011-12-16 13:57 (-3d) | 2011-12-22 17:00 → 2011-12-22 15:57 | 4d → 4.25d | 586.1d → 0d |  |  |
| 200 | Merge modules | 2011-12-19 08:00 → 2011-12-16 13:57 (-3d) | 2011-12-19 17:00 → 2011-12-19 13:57 |  | 587.85d → 0d | none → 197 | constraint start no earlier than 2011-12-19 08:00 → none |
| 201 | System test | 2011-12-20 08:00 → 2011-12-19 13:57 (-1d) | 2011-12-21 10:00 → 2011-12-20 15:57 (-1d) |  | 587.85d → 0d |  |  |
| 202 | **Help document** | 2011-12-21 08:00 → 2011-12-20 15:57 (-1d) | 2011-12-22 17:00 → 2011-12-22 15:57 |  | 588.35d → 0d |  |  |
| 203 | Write help documents | 2011-12-21 08:00 → 2011-12-20 15:57 (-1d) | 2011-12-22 17:00 → 2011-12-22 15:57 |  | 588.35d → 0d | none → 201 | constraint start no earlier than 2011-12-21 08:00 → none |

## Version 3 (saved 2011-12-05)

Last finish 2011-12-22 → 2012-01-02 (+11d).

Added:

| ID | Task | Duration | Start | Finish | Predecessors | Resources |
| --- | --- | --- | --- | --- | --- | --- |
| 30 | Learning control layout | 2d | 2011-12-01 08:48 | 2011-12-05 08:48 | 29 | dungnm; nhanld |
| 31 | Learning struts2, spring, hibernate integration | 2d | 2011-12-01 08:48 | 2011-12-05 08:48 | 30SS | hant21; phongtv; hungnm |

Removed: 34 Pseudo-code; 37 Self code review; 43 Pseudo-code; 46 Self code review; 52 Pseudo-code; 55 Self code review; 62 Pseudo-code; 65 Self code review; 71 Pseudo-code; 74 Self code review; 80 Pseudo-code; 83 Self code review; 89 Pseudo-code; 92 Self code review; 98 Pseudo-code; 101 Self code review; 108 Pseudo-code; 111 Self code review; 117 Pseudo-code; 120 Self code review; 127 Pseudo-code; 130 Self code review; 136 Pseudo-code; 139 Self code review; 145 Pseudo-code; 148 Self code review; 154 Pseudo-code; 157 Self code review; 164 Pseudo-code; 167 Self code review; 173 Pseudo-code; 176 Self code review; 182 Pseudo-code; 185 Self code review; 191 Pseudo-code; 194 Self code review

Changed:

| ID | Task | Start | Finish | Duration | Total float | Predecessors |
| --- | --- | --- | --- | --- | --- | --- |
| 1 | **MockProject** |  | 2011-12-22 15:57 → 2012-01-02 08:48 (+11d) | 24.87d → 31.1d |  |  |
| 6 | **Create document & Learning** |  | 2011-11-30 13:48 → 2011-12-05 08:48 (+5d) | 7.6d → 10.1d |  |  |
| 13 | Template for prototype |  |  |  |  | 8, 12 → 8 |
| 15 | Create project plan, integrate work flow |  |  |  | 17.6d → 28.1d | 13SS, 14 → 13SS |
| 17 | Leaning Hibernate |  |  |  | 17.6d → 28.1d | 13SS, 16 → 13SS |
| 19 | Build up prototype for module: 6.1,6.6, 6.7, 6.8 |  |  |  |  | 13, 18 → 13 |
| 24 | Learning Spring dependency |  |  |  |  | 19, 23 → 19 |
| 26 | Demo hibernate |  |  |  |  | 24, 25 → 24 |
| 29 | High level design |  | 2011-11-30 13:48 → 2011-12-01 08:48 (+1d) | 0.5d → 1d |  |  |
| 32 | **Construction** | 2011-11-30 13:48 → 2011-12-05 08:48 (+5d) | 2011-12-16 13:57 → 2011-12-27 08:48 (+11d) | 12.02d → 16d |  |  |
| 33 | **Iteration 1 - Login, menu, contact, addresslookup** | 2011-11-30 13:48 → 2011-12-05 08:48 (+5d) | 2011-12-13 13:48 → 2011-12-21 13:48 (+8d) | 9d → 12.5d |  |  |
| 34 | **Logon-Logout, menu** | 2011-11-30 13:48 → 2011-12-05 08:48 (+5d) | 2011-12-05 13:48 → 2011-12-12 08:48 (+7d) | 3d → 5d |  |  |
| 35 | Class, Sequence digaram | 2011-11-30 13:48 → 2011-12-05 08:48 (+5d) | 2011-12-01 08:48 → 2011-12-05 13:48 (+4d) |  |  | 29 → 31 |
| 36 | Prepare for Unit testing | 2011-12-01 13:48 → 2011-12-05 13:48 (+4d) | 2011-12-01 14:36 → 2011-12-06 08:48 (+5d) | 0.1d → 0.5d | 3d → 7.5d | Pseudo-code → 35 |
| 37 | Code | 2011-12-01 14:36 → 2011-12-06 08:48 (+5d) | 2011-12-02 17:00 → 2011-12-08 08:48 (+6d) | 1.3d → 2d | 3d → 7.5d |  |
| 38 | Peer code review | 2011-12-05 08:48 → 2011-12-08 08:48 (+3d) | 2011-12-05 09:36 → 2011-12-08 13:48 (+3d) | 0.1d → 0.5d | 7.27d → 7.5d | Self code review → 37 |
| 39 | Prepare UT script | 2011-12-05 09:36 → 2011-12-08 13:48 (+3d) | 2011-12-05 11:12 → 2011-12-09 08:48 (+4d) | 0.2d → 0.5d | 7.27d → 7.5d |  |
| 40 | Perform UT and fix bug | 2011-12-05 11:12 → 2011-12-09 08:48 (+4d) | 2011-12-05 13:48 → 2011-12-12 08:48 (+7d) | 0.2d → 1d | 7.27d → 7.5d |  |
| 41 | **Contact** | 2011-12-05 13:48 → 2011-12-12 08:48 (+7d) | 2011-12-08 13:48 → 2011-12-16 08:48 (+8d) | 3d → 4d | 3d → 7.5d |  |
| 42 | Class, Sequence digaram | 2011-12-05 13:48 → 2011-12-12 08:48 (+7d) | 2011-12-06 08:48 → 2011-12-12 13:48 (+6d) |  | 7.27d → 7.5d |  |
| 43 | Prepare for Unit testing | 2011-12-06 13:48 → 2011-12-12 13:48 (+6d) | 2011-12-06 14:36 → 2011-12-13 08:48 (+7d) | 0.1d → 0.5d | 7.27d → 7.5d | Pseudo-code → 42 |
| 44 | Code | 2011-12-06 14:36 → 2011-12-13 08:48 (+7d) | 2011-12-07 14:36 → 2011-12-14 13:48 (+7d) | 1d → 1.5d | 7.27d → 7.5d |  |
| 45 | Peer code review | 2011-12-07 15:24 → 2011-12-14 13:48 (+7d) | 2011-12-07 16:12 → 2011-12-15 08:48 (+8d) | 0.1d → 0.5d | 7.27d → 7.5d | Self code review → 44 |
| 46 | Prepare UT script | 2011-12-07 16:12 → 2011-12-15 08:48 (+8d) | 2011-12-08 09:36 → 2011-12-15 13:48 (+7d) | 0.3d → 0.5d | 7.27d → 7.5d |  |
| 47 | Perform UT and fix bug | 2011-12-08 09:36 → 2011-12-15 13:48 (+7d) | 2011-12-08 13:48 → 2011-12-16 08:48 (+8d) | 0.4d → 0.5d | 7.27d → 7.5d |  |
| 48 | **Address lookup** | 2011-12-08 13:48 → 2011-12-16 08:48 (+8d) | 2011-12-13 13:48 → 2011-12-21 13:48 (+8d) | 3d → 3.5d | 3d → 7.5d |  |
| 49 | Class, Sequence digaram | 2011-12-08 13:48 → 2011-12-16 08:48 (+8d) | 2011-12-09 08:48 → 2011-12-16 13:48 (+7d) |  | 7.27d → 7.5d |  |
| 50 | Prepare for Unit testing | 2011-12-09 13:48 → 2011-12-16 13:48 (+7d) | 2011-12-09 14:36 → 2011-12-19 08:48 (+10d) | 0.1d → 0.5d | 7.27d → 7.5d | Pseudo-code → 49 |
| 51 | Code | 2011-12-09 14:36 → 2011-12-19 08:48 (+10d) | 2011-12-12 14:36 → 2011-12-20 08:48 (+8d) |  | 7.27d → 7.5d |  |
| 52 | Peer code review | 2011-12-12 15:24 → 2011-12-20 08:48 (+8d) | 2011-12-12 16:12 → 2011-12-20 13:48 (+8d) | 0.1d → 0.5d | 7.27d → 7.5d | Self code review → 51 |
| 53 | Prepare UT script | 2011-12-12 16:12 → 2011-12-20 13:48 (+8d) | 2011-12-13 09:36 → 2011-12-21 08:48 (+8d) | 0.3d → 0.5d | 7.27d → 7.5d |  |
| 54 | Perform UT and fix bug | 2011-12-13 09:36 → 2011-12-21 08:48 (+8d) | 2011-12-13 13:48 → 2011-12-21 13:48 (+8d) | 0.4d → 0.5d | 7.27d → 7.5d |  |
| 55 | **Iteration 2 - Organization Maintenance** | 2011-11-30 13:48 → 2011-12-05 08:48 (+5d) | 2011-12-16 13:48 → 2011-12-27 08:48 (+11d) | 12d → 16d | 4.27d → 4d |  |
| 56 | **Organization** | 2011-11-30 13:48 → 2011-12-05 08:48 (+5d) | 2011-12-05 13:48 → 2011-12-12 08:48 (+7d) | 3d → 5d | 4.27d → 4d |  |
| 57 | Class, Sequence digaram | 2011-11-30 13:48 → 2011-12-05 08:48 (+5d) | 2011-12-01 08:48 → 2011-12-05 13:48 (+4d) |  | 4.27d → 4d |  |
| 58 | Prepare for Unit testing | 2011-12-01 13:48 → 2011-12-05 13:48 (+4d) | 2011-12-01 14:36 → 2011-12-06 08:48 (+5d) | 0.1d → 0.5d | 4.27d → 4d | Pseudo-code → 57 |
| 59 | Code | 2011-12-01 14:36 → 2011-12-06 08:48 (+5d) | 2011-12-02 14:36 → 2011-12-08 08:48 (+6d) | 1d → 2d | 4.27d → 4d |  |
| 60 | Peer code review | 2011-12-02 15:24 → 2011-12-08 08:48 (+6d) | 2011-12-02 16:12 → 2011-12-08 13:48 (+6d) | 0.1d → 0.5d | 4.27d → 4d | Self code review → 59 |
| 61 | Prepare UT script | 2011-12-02 16:12 → 2011-12-08 13:48 (+6d) | 2011-12-05 09:36 → 2011-12-09 08:48 (+4d) | 0.3d → 0.5d | 4.27d → 4d |  |
| 62 | Perform UT and fix bug | 2011-12-05 09:36 → 2011-12-09 08:48 (+4d) | 2011-12-05 13:48 → 2011-12-12 08:48 (+7d) | 0.4d → 1d | 4.27d → 4d |  |
| 63 | **Supporting Materials** | 2011-12-05 13:48 → 2011-12-12 08:48 (+7d) | 2011-12-08 13:48 → 2011-12-16 08:48 (+8d) | 3d → 4d | 4.27d → 4d |  |
| 64 | Class, Sequence digaram | 2011-12-05 13:48 → 2011-12-12 08:48 (+7d) | 2011-12-06 08:48 → 2011-12-12 13:48 (+6d) |  | 4.27d → 4d |  |
| 65 | Prepare for Unit testing | 2011-12-06 13:48 → 2011-12-12 13:48 (+6d) | 2011-12-06 14:36 → 2011-12-13 08:48 (+7d) | 0.1d → 0.5d | 4.27d → 4d | Pseudo-code → 64 |
| 66 | Code | 2011-12-06 14:36 → 2011-12-13 08:48 (+7d) | 2011-12-07 14:36 → 2011-12-14 13:48 (+7d) | 1d → 1.5d | 4.27d → 4d |  |
| 67 | Peer code review | 2011-12-07 15:24 → 2011-12-14 13:48 (+7d) | 2011-12-07 16:12 → 2011-12-15 08:48 (+8d) | 0.1d → 0.5d | 4.27d → 4d | Self code review → 66 |
| 68 | Prepare UT script | 2011-12-07 16:12 → 2011-12-15 08:48 (+8d) | 2011-12-08 09:36 → 2011-12-15 13:48 (+7d) | 0.3d → 0.5d | 4.27d → 4d |  |
| 69 | Perform UT and fix bug | 2011-12-08 09:36 → 2011-12-15 13:48 (+7d) | 2011-12-08 13:48 → 2011-12-16 08:48 (+8d) | 0.4d → 0.5d | 4.27d → 4d |  |
| 70 | **Directorates** | 2011-12-08 13:48 → 2011-12-16 08:48 (+8d) | 2011-12-13 13:48 → 2011-12-21 13:48 (+8d) | 3d → 3.5d | 4.27d → 4d |  |
| 71 | Class, Sequence digaram | 2011-12-08 13:48 → 2011-12-16 08:48 (+8d) | 2011-12-09 08:48 → 2011-12-16 13:48 (+7d) |  | 4.27d → 4d |  |
| 72 | Prepare for Unit testing | 2011-12-09 13:48 → 2011-12-16 13:48 (+7d) | 2011-12-09 14:36 → 2011-12-19 08:48 (+10d) | 0.1d → 0.5d | 4.27d → 4d | Pseudo-code → 71 |
| 73 | Code | 2011-12-09 14:36 → 2011-12-19 08:48 (+10d) | 2011-12-12 14:36 → 2011-12-20 08:48 (+8d) |  | 4.27d → 4d |  |
| 74 | Peer code review | 2011-12-12 15:24 → 2011-12-20 08:48 (+8d) | 2011-12-12 16:12 → 2011-12-20 13:48 (+8d) | 0.1d → 0.5d | 4.27d → 4d | Self code review → 73 |
| 75 | Prepare UT script | 2011-12-12 16:12 → 2011-12-20 13:48 (+8d) | 2011-12-13 09:36 → 2011-12-21 08:48 (+8d) | 0.3d → 0.5d | 4.27d → 4d |  |
| 76 | Perform UT and fix bug | 2011-12-13 09:36 → 2011-12-21 08:48 (+8d) | 2011-12-13 13:48 → 2011-12-21 13:48 (+8d) | 0.4d → 0.5d | 4.27d → 4d |  |
| 77 | **Department** | 2011-12-13 13:48 → 2011-12-21 13:48 (+8d) | 2011-12-16 13:48 → 2011-12-27 08:48 (+11d) | 3d → 3.5d | 4.27d → 4d |  |
| 78 | Class, Sequence digaram | 2011-12-13 13:48 → 2011-12-21 13:48 (+8d) | 2011-12-14 08:48 → 2011-12-22 08:48 (+8d) |  | 4.27d → 4d |  |
| 79 | Prepare for Unit testing | 2011-12-14 13:48 → 2011-12-22 08:48 (+8d) | 2011-12-14 14:36 → 2011-12-22 13:48 (+8d) | 0.1d → 0.5d | 4.27d → 4d | Pseudo-code → 78 |
| 80 | Code | 2011-12-14 14:36 → 2011-12-22 13:48 (+8d) | 2011-12-15 14:36 → 2011-12-23 13:48 (+8d) |  | 4.27d → 4d |  |
| 81 | Peer code review | 2011-12-15 15:24 → 2011-12-23 13:48 (+8d) | 2011-12-15 16:12 → 2011-12-26 08:48 (+11d) | 0.1d → 0.5d | 4.27d → 4d | Self code review → 80 |
| 82 | Prepare UT script | 2011-12-15 16:12 → 2011-12-26 08:48 (+11d) | 2011-12-16 09:36 → 2011-12-26 13:48 (+10d) | 0.3d → 0.5d | 4.27d → 4d |  |
| 83 | Perform UT and fix bug | 2011-12-16 09:36 → 2011-12-26 13:48 (+10d) | 2011-12-16 13:48 → 2011-12-27 08:48 (+11d) | 0.4d → 0.5d | 4.27d → 4d |  |
| 84 | **Team** | 2011-11-30 13:48 → 2011-12-05 08:48 (+5d) | 2011-12-05 13:48 → 2011-12-12 08:48 (+7d) | 3d → 5d | 7.27d → 7.5d |  |
| 85 | Class, Sequence digaram | 2011-11-30 13:48 → 2011-12-05 08:48 (+5d) | 2011-12-01 08:48 → 2011-12-05 13:48 (+4d) |  | 7.27d → 7.5d |  |
| 86 | Prepare for Unit testing | 2011-12-01 13:48 → 2011-12-05 13:48 (+4d) | 2011-12-01 14:36 → 2011-12-06 08:48 (+5d) | 0.1d → 0.5d | 7.27d → 7.5d | Pseudo-code → 85 |
| 87 | Code | 2011-12-01 14:36 → 2011-12-06 08:48 (+5d) | 2011-12-02 14:36 → 2011-12-08 08:48 (+6d) | 1d → 2d | 7.27d → 7.5d |  |
| 88 | Peer code review | 2011-12-02 15:24 → 2011-12-08 08:48 (+6d) | 2011-12-02 16:12 → 2011-12-08 13:48 (+6d) | 0.1d → 0.5d | 7.27d → 7.5d | Self code review → 87 |
| 89 | Prepare UT script | 2011-12-02 16:12 → 2011-12-08 13:48 (+6d) | 2011-12-05 09:36 → 2011-12-09 08:48 (+4d) | 0.3d → 0.5d | 7.27d → 7.5d |  |
| 90 | Perform UT and fix bug | 2011-12-05 09:36 → 2011-12-09 08:48 (+4d) | 2011-12-05 13:48 → 2011-12-12 08:48 (+7d) | 0.4d → 1d | 7.27d → 7.5d |  |
| 91 | **Iteration 3 - Services, Programme** | 2011-12-05 13:48 → 2011-12-12 08:48 (+7d) | 2011-12-13 13:48 → 2011-12-21 13:48 (+8d) | 6d → 7.5d | 7.27d → 7.5d |  |
| 92 | **Service** | 2011-12-05 13:48 → 2011-12-12 08:48 (+7d) | 2011-12-08 13:48 → 2011-12-16 08:48 (+8d) | 3d → 4d | 7.27d → 7.5d |  |

| ID | Task | Start | Finish | Duration | Total float | Predecessors |
| --- | --- | --- | --- | --- | --- | --- |
| 93 | Class, Sequence digaram | 2011-12-05 13:48 → 2011-12-12 08:48 (+7d) | 2011-12-06 08:48 → 2011-12-12 13:48 (+6d) |  | 7.27d → 7.5d |  |
| 94 | Prepare for Unit testing | 2011-12-06 13:48 → 2011-12-12 13:48 (+6d) | 2011-12-06 14:36 → 2011-12-13 08:48 (+7d) | 0.1d → 0.5d | 7.27d → 7.5d | Pseudo-code → 93 |
| 95 | Code | 2011-12-06 14:36 → 2011-12-13 08:48 (+7d) | 2011-12-07 14:36 → 2011-12-14 13:48 (+7d) | 1d → 1.5d | 7.27d → 7.5d |  |
| 96 | Peer code review | 2011-12-07 15:24 → 2011-12-14 13:48 (+7d) | 2011-12-07 16:12 → 2011-12-15 08:48 (+8d) | 0.1d → 0.5d | 7.27d → 7.5d | Self code review → 95 |
| 97 | Prepare UT script | 2011-12-07 16:12 → 2011-12-15 08:48 (+8d) | 2011-12-08 09:36 → 2011-12-15 13:48 (+7d) | 0.3d → 0.5d | 7.27d → 7.5d |  |
| 98 | Perform UT and fix bug | 2011-12-08 09:36 → 2011-12-15 13:48 (+7d) | 2011-12-08 13:48 → 2011-12-16 08:48 (+8d) | 0.4d → 0.5d | 7.27d → 7.5d |  |
| 99 | **Programme** | 2011-12-08 13:48 → 2011-12-16 08:48 (+8d) | 2011-12-13 13:48 → 2011-12-21 13:48 (+8d) | 3d → 3.5d | 7.27d → 7.5d |  |
| 100 | Class, Sequence digaram | 2011-12-08 13:48 → 2011-12-16 08:48 (+8d) | 2011-12-09 08:48 → 2011-12-16 13:48 (+7d) |  | 7.27d → 7.5d |  |
| 101 | Prepare for Unit testing | 2011-12-09 13:48 → 2011-12-16 13:48 (+7d) | 2011-12-09 14:36 → 2011-12-19 08:48 (+10d) | 0.1d → 0.5d | 7.27d → 7.5d | Pseudo-code → 100 |
| 102 | Code | 2011-12-09 14:36 → 2011-12-19 08:48 (+10d) | 2011-12-12 14:36 → 2011-12-20 08:48 (+8d) |  | 7.27d → 7.5d |  |
| 103 | Peer code review | 2011-12-12 15:24 → 2011-12-20 08:48 (+8d) | 2011-12-12 16:12 → 2011-12-20 13:48 (+8d) | 0.1d → 0.5d | 7.27d → 7.5d | Self code review → 102 |
| 104 | Prepare UT script | 2011-12-12 16:12 → 2011-12-20 13:48 (+8d) | 2011-12-13 09:36 → 2011-12-21 08:48 (+8d) | 0.3d → 0.5d | 7.27d → 7.5d |  |
| 105 | Perform UT and fix bug | 2011-12-13 09:36 → 2011-12-21 08:48 (+8d) | 2011-12-13 13:48 → 2011-12-21 13:48 (+8d) | 0.4d → 0.5d | 7.27d → 7.5d |  |
| 106 | **Iteration 4 -Trust Region, Trust District, Govermenet list, Type of Business lookup** | 2011-11-30 13:48 → 2011-12-05 08:48 (+5d) | 2011-12-16 13:48 → 2011-12-27 08:48 (+11d) | 12d → 16d | 0.02d → 4d |  |
| 107 | **Trust Region** | 2011-11-30 13:48 → 2011-12-05 08:48 (+5d) | 2011-12-05 13:48 → 2011-12-12 08:48 (+7d) | 3d → 5d | 0.02d → 4d |  |
| 108 | Class, Sequence digaram | 2011-11-30 13:48 → 2011-12-05 08:48 (+5d) | 2011-12-01 08:48 → 2011-12-05 13:48 (+4d) |  | 0.02d → 4d |  |
| 109 | Prepare for Unit testing | 2011-12-01 13:48 → 2011-12-05 13:48 (+4d) | 2011-12-01 14:36 → 2011-12-06 08:48 (+5d) | 0.1d → 0.5d | 0.02d → 4d | Pseudo-code → 108 |
| 110 | Code | 2011-12-01 14:36 → 2011-12-06 08:48 (+5d) | 2011-12-02 14:36 → 2011-12-08 08:48 (+6d) | 1d → 2d | 0.02d → 4d |  |
| 111 | Peer code review | 2011-12-02 15:24 → 2011-12-08 08:48 (+6d) | 2011-12-02 16:12 → 2011-12-08 13:48 (+6d) | 0.1d → 0.5d | 4.27d → 4d | Self code review → 110 |
| 112 | Prepare UT script | 2011-12-02 16:12 → 2011-12-08 13:48 (+6d) | 2011-12-05 09:36 → 2011-12-09 08:48 (+4d) | 0.3d → 0.5d | 4.27d → 4d |  |
| 113 | Perform UT and fix bug | 2011-12-05 09:36 → 2011-12-09 08:48 (+4d) | 2011-12-05 13:48 → 2011-12-12 08:48 (+7d) | 0.4d → 1d | 4.27d → 4d |  |
| 114 | **Trust District** | 2011-12-05 13:48 → 2011-12-12 08:48 (+7d) | 2011-12-08 13:48 → 2011-12-16 08:48 (+8d) | 3d → 4d | 0.02d → 4d |  |
| 115 | Class, Sequence digaram | 2011-12-05 13:48 → 2011-12-12 08:48 (+7d) | 2011-12-06 08:48 → 2011-12-12 13:48 (+6d) |  | 4.27d → 4d |  |
| 116 | Prepare for Unit testing | 2011-12-06 13:48 → 2011-12-12 13:48 (+6d) | 2011-12-06 14:36 → 2011-12-13 08:48 (+7d) | 0.1d → 0.5d | 4.27d → 4d | Pseudo-code → 115 |
| 117 | Code | 2011-12-06 14:36 → 2011-12-13 08:48 (+7d) | 2011-12-07 14:36 → 2011-12-14 13:48 (+7d) | 1d → 1.5d | 4.27d → 4d |  |
| 118 | Peer code review | 2011-12-07 15:24 → 2011-12-14 13:48 (+7d) | 2011-12-07 16:12 → 2011-12-15 08:48 (+8d) | 0.1d → 0.5d | 4.27d → 4d | Self code review → 117 |
| 119 | Prepare UT script | 2011-12-07 16:12 → 2011-12-15 08:48 (+8d) | 2011-12-08 09:36 → 2011-12-15 13:48 (+7d) | 0.3d → 0.5d | 4.27d → 4d |  |
| 120 | Perform UT and fix bug | 2011-12-08 09:36 → 2011-12-15 13:48 (+7d) | 2011-12-08 13:48 → 2011-12-16 08:48 (+8d) | 0.4d → 0.5d | 4.27d → 4d |  |
| 121 | **Gov Office** | 2011-12-08 13:48 → 2011-12-16 08:48 (+8d) | 2011-12-13 13:48 → 2011-12-21 13:48 (+8d) | 3d → 3.5d | 0.02d → 4d |  |
| 122 | Class, Sequence digaram | 2011-12-08 13:48 → 2011-12-16 08:48 (+8d) | 2011-12-09 08:48 → 2011-12-16 13:48 (+7d) |  | 4.27d → 4d |  |
| 123 | Prepare for Unit testing | 2011-12-09 13:48 → 2011-12-16 13:48 (+7d) | 2011-12-09 14:36 → 2011-12-19 08:48 (+10d) | 0.1d → 0.5d | 4.27d → 4d | Pseudo-code → 122 |
| 124 | Code | 2011-12-09 14:36 → 2011-12-19 08:48 (+10d) | 2011-12-12 14:36 → 2011-12-20 08:48 (+8d) |  | 4.27d → 4d |  |
| 125 | Peer code review | 2011-12-12 15:24 → 2011-12-20 08:48 (+8d) | 2011-12-12 16:12 → 2011-12-20 13:48 (+8d) | 0.1d → 0.5d | 4.27d → 4d | Self code review → 124 |
| 126 | Prepare UT script | 2011-12-12 16:12 → 2011-12-20 13:48 (+8d) | 2011-12-13 09:36 → 2011-12-21 08:48 (+8d) | 0.3d → 0.5d | 4.27d → 4d |  |
| 127 | Perform UT and fix bug | 2011-12-13 09:36 → 2011-12-21 08:48 (+8d) | 2011-12-13 13:48 → 2011-12-21 13:48 (+8d) | 0.4d → 0.5d | 4.27d → 4d |  |
| 128 | **Type of Business lookup** | 2011-12-13 13:48 → 2011-12-21 13:48 (+8d) | 2011-12-16 13:48 → 2011-12-27 08:48 (+11d) | 3d → 3.5d | 0.02d → 4d |  |
| 129 | Class, Sequence digaram | 2011-12-13 13:48 → 2011-12-21 13:48 (+8d) | 2011-12-14 08:48 → 2011-12-22 08:48 (+8d) |  | 4.27d → 4d |  |
| 130 | Prepare for Unit testing | 2011-12-14 13:48 → 2011-12-22 08:48 (+8d) | 2011-12-14 14:36 → 2011-12-22 13:48 (+8d) | 0.1d → 0.5d | 4.27d → 4d | Pseudo-code → 129 |
| 131 | Code | 2011-12-14 14:36 → 2011-12-22 13:48 (+8d) | 2011-12-15 14:36 → 2011-12-23 13:48 (+8d) |  | 4.27d → 4d |  |
| 132 | Peer code review | 2011-12-15 15:24 → 2011-12-23 13:48 (+8d) | 2011-12-15 16:12 → 2011-12-26 08:48 (+11d) | 0.1d → 0.5d | 4.27d → 4d | Self code review → 131 |
| 133 | Prepare UT script | 2011-12-15 16:12 → 2011-12-26 08:48 (+11d) | 2011-12-16 09:36 → 2011-12-26 13:48 (+10d) | 0.3d → 0.5d | 4.27d → 4d |  |
| 134 | Perform UT and fix bug | 2011-12-16 09:36 → 2011-12-26 13:48 (+10d) | 2011-12-16 13:48 → 2011-12-27 08:48 (+11d) | 0.4d → 0.5d | 4.27d → 4d |  |
| 135 | **Iteration 5 -Premise, Facility, Volunteering, Minor Work Projects** | 2011-11-30 13:48 → 2011-12-05 08:48 (+5d) | 2011-12-16 13:57 → 2011-12-27 08:48 (+11d) | 12.02d → 16d |  |  |
| 136 | **Premise** | 2011-11-30 13:48 → 2011-12-05 08:48 (+5d) | 2011-12-05 13:48 → 2011-12-12 08:48 (+7d) | 3d → 5d |  |  |
| 137 | Class, Sequence digaram | 2011-11-30 13:48 → 2011-12-05 08:48 (+5d) | 2011-12-01 08:48 → 2011-12-05 13:48 (+4d) |  |  |  |
| 138 | Prepare for Unit testing | 2011-12-01 13:48 → 2011-12-05 13:48 (+4d) | 2011-12-01 14:36 → 2011-12-06 08:48 (+5d) | 0.1d → 0.5d |  | Pseudo-code → 137 |
| 139 | Code | 2011-12-01 14:36 → 2011-12-06 08:48 (+5d) | 2011-12-02 14:36 → 2011-12-08 08:48 (+6d) | 1d → 2d |  |  |
| 140 | Peer code review | 2011-12-02 15:24 → 2011-12-08 08:48 (+6d) | 2011-12-02 16:12 → 2011-12-08 13:48 (+6d) | 0.1d → 0.5d |  | Self code review → 139 |
| 141 | Prepare UT script | 2011-12-02 16:12 → 2011-12-08 13:48 (+6d) | 2011-12-05 09:36 → 2011-12-09 08:48 (+4d) | 0.3d → 0.5d |  |  |
| 142 | Perform UT and fix bug | 2011-12-05 09:36 → 2011-12-09 08:48 (+4d) | 2011-12-05 13:48 → 2011-12-12 08:48 (+7d) | 0.4d → 1d |  |  |
| 143 | **Facility** | 2011-12-05 13:48 → 2011-12-12 08:48 (+7d) | 2011-12-08 13:48 → 2011-12-16 08:48 (+8d) | 3d → 4d |  |  |
| 144 | Class, Sequence digaram | 2011-12-05 13:48 → 2011-12-12 08:48 (+7d) | 2011-12-06 08:48 → 2011-12-12 13:48 (+6d) |  |  | 142, 137SS → 142 |
| 145 | Prepare for Unit testing | 2011-12-06 13:48 → 2011-12-12 13:48 (+6d) | 2011-12-06 14:36 → 2011-12-13 08:48 (+7d) | 0.1d → 0.5d |  | Pseudo-code → 144 |
| 146 | Code | 2011-12-06 14:36 → 2011-12-13 08:48 (+7d) | 2011-12-07 14:36 → 2011-12-14 13:48 (+7d) | 1d → 1.5d |  |  |
| 147 | Peer code review | 2011-12-07 15:24 → 2011-12-14 13:48 (+7d) | 2011-12-07 16:12 → 2011-12-15 08:48 (+8d) | 0.1d → 0.5d |  | Self code review → 146 |
| 148 | Prepare UT script | 2011-12-07 16:12 → 2011-12-15 08:48 (+8d) | 2011-12-08 09:36 → 2011-12-15 13:48 (+7d) | 0.3d → 0.5d |  |  |
| 149 | Perform UT and fix bug | 2011-12-08 09:36 → 2011-12-15 13:48 (+7d) | 2011-12-08 13:48 → 2011-12-16 08:48 (+8d) | 0.4d → 0.5d |  |  |
| 150 | **Volunteering** | 2011-12-08 13:48 → 2011-12-16 08:48 (+8d) | 2011-12-13 13:48 → 2011-12-21 13:48 (+8d) | 3d → 3.5d |  |  |
| 151 | Class, Sequence digaram | 2011-12-08 13:48 → 2011-12-16 08:48 (+8d) | 2011-12-09 08:48 → 2011-12-16 13:48 (+7d) |  |  | 149, 137SS → 149 |
| 152 | Prepare for Unit testing | 2011-12-09 13:48 → 2011-12-16 13:48 (+7d) | 2011-12-09 14:36 → 2011-12-19 08:48 (+10d) | 0.1d → 0.5d |  | Pseudo-code → 151 |
| 153 | Code | 2011-12-09 14:36 → 2011-12-19 08:48 (+10d) | 2011-12-12 14:36 → 2011-12-20 08:48 (+8d) |  |  |  |
| 154 | Peer code review | 2011-12-12 15:24 → 2011-12-20 08:48 (+8d) | 2011-12-12 16:12 → 2011-12-20 13:48 (+8d) | 0.1d → 0.5d |  | Self code review → 153 |
| 155 | Prepare UT script | 2011-12-12 16:12 → 2011-12-20 13:48 (+8d) | 2011-12-13 09:36 → 2011-12-21 08:48 (+8d) | 0.3d → 0.5d |  |  |
| 156 | Perform UT and fix bug | 2011-12-13 09:36 → 2011-12-21 08:48 (+8d) | 2011-12-13 13:48 → 2011-12-21 13:48 (+8d) | 0.4d → 0.5d |  |  |
| 157 | **Minor Work Projects** | 2011-12-13 13:48 → 2011-12-21 13:48 (+8d) | 2011-12-16 13:57 → 2011-12-27 08:48 (+11d) | 3.02d → 3.5d |  |  |
| 158 | Class, Sequence digaram | 2011-12-13 13:48 → 2011-12-21 13:48 (+8d) | 2011-12-14 08:48 → 2011-12-22 08:48 (+8d) |  |  | 156, 137SS → 156 |
| 159 | Prepare for Unit testing | 2011-12-14 13:48 → 2011-12-22 08:48 (+8d) | 2011-12-14 14:36 → 2011-12-22 13:48 (+8d) | 0.1d → 0.5d |  | Pseudo-code → 158 |
| 160 | Code | 2011-12-14 14:36 → 2011-12-22 13:48 (+8d) | 2011-12-15 14:36 → 2011-12-23 13:48 (+8d) |  |  |  |
| 161 | Peer code review | 2011-12-15 15:24 → 2011-12-23 13:48 (+8d) | 2011-12-15 16:21 → 2011-12-26 08:48 (+11d) | 0.12d → 0.5d |  | Self code review → 160 |
| 162 | Prepare UT script | 2011-12-15 16:21 → 2011-12-26 08:48 (+11d) | 2011-12-16 09:45 → 2011-12-26 13:48 (+10d) | 0.3d → 0.5d |  |  |

| ID | Task | Start | Finish | Duration |
| --- | --- | --- | --- | --- |
| 163 | Perform UT and fix bug | 2011-12-16 09:45 → 2011-12-26 13:48 (+10d) | 2011-12-16 13:57 → 2011-12-27 08:48 (+11d) | 0.4d → 0.5d |
| 165 | **Integrate modules** | 2011-12-16 13:57 → 2011-12-27 08:48 (+11d) | 2011-12-22 15:57 → 2012-01-02 08:48 (+11d) | 4.25d → 4d |
| 166 | Merge modules | 2011-12-16 13:57 → 2011-12-27 08:48 (+11d) | 2011-12-19 13:57 → 2011-12-28 08:48 (+9d) |  |
| 167 | System test | 2011-12-19 13:57 → 2011-12-28 08:48 (+9d) | 2011-12-20 15:57 → 2011-12-30 08:48 (+10d) | 1.25d → 2d |
| 168 | **Help document** | 2011-12-20 15:57 → 2011-12-30 08:48 (+10d) | 2011-12-22 15:57 → 2012-01-02 08:48 (+11d) | 2d → 1d |
| 169 | Write help documents | 2011-12-20 15:57 → 2011-12-30 08:48 (+10d) | 2011-12-22 15:57 → 2012-01-02 08:48 (+11d) | 2d → 1d |

## Version 4 (saved 2011-12-08)

Last finish 2012-01-02 → 2012-01-03 (+1d).

Added:

| ID | Task | Duration | Start | Finish |
| --- | --- | --- | --- | --- |
| 33 | **Iteration 1 - Georaphy, contact** | 5d | 2011-12-05 08:48 | 2011-12-12 08:48 |

Removed: 91 Iteration 3 - Services, Programme; 106 Iteration 4 -Trust Region, Trust District, Govermenet list, Type of Business lookup

Changed:

| ID | Task | Start | Finish | Duration | Total float | Predecessors | Other |
| --- | --- | --- | --- | --- | --- | --- | --- |
| 1 | **MockProject** |  | 2012-01-02 08:48 → 2012-01-03 08:48 (+1d) | 31.1d → 32.1d |  |  |  |
| 32 | **Construction** |  | 2011-12-27 08:48 → 2011-12-16 08:48 (-11d) | 16d → 9d |  |  |  |
| 34 | **Contact** | 2011-12-12 08:48 → 2011-12-05 08:48 (-7d) | 2011-12-16 08:48 → 2011-12-12 08:48 (-4d) | 4d → 5d | 7.5d → 0d |  | resources nhanld → nhanld; dungnm |
| 35 | Class, Sequence digaram | 2011-12-12 08:48 → 2011-12-05 08:48 (-7d) | 2011-12-12 13:48 → 2011-12-05 13:48 (-7d) |  | 7.5d → 0d | 105 → 31 | resources nhanld → nhanld; dungnm |
| 36 | Prepare for Unit testing | 2011-12-12 13:48 → 2011-12-05 13:48 (-7d) | 2011-12-13 08:48 → 2011-12-06 08:48 (-7d) |  | 7.5d → 0d |  | resources nhanld → nhanld; dungnm |
| 37 | Code | 2011-12-13 08:48 → 2011-12-06 08:48 (-7d) | 2011-12-14 13:48 → 2011-12-08 08:48 (-6d) | 1.5d → 2d | 7.5d → 0d |  | resources nhanld → nhanld; dungnm |
| 38 | Peer code review | 2011-12-14 13:48 → 2011-12-08 08:48 (-6d) | 2011-12-15 08:48 → 2011-12-08 13:48 (-7d) |  | 7.5d → 0d |  | resources nhanld → nhanld; dungnm |
| 39 | Prepare UT script | 2011-12-15 08:48 → 2011-12-08 13:48 (-7d) | 2011-12-15 13:48 → 2011-12-09 08:48 (-6d) |  | 7.5d → 0d |  | resources nhanld → nhanld; dungnm |
| 40 | Perform UT and fix bug | 2011-12-15 13:48 → 2011-12-09 08:48 (-6d) | 2011-12-16 08:48 → 2011-12-12 08:48 (-4d) | 0.5d → 1d | 7.5d → 0d |  | resources nhanld → nhanld; dungnm |
| 42 | Class, Sequence digaram |  |  |  | 4d → 16d | 100SS → 35SS | resources dungnm → hant21 |
| 43 | Prepare for Unit testing |  |  |  | 4d → 16d |  | resources dungnm → hant21 |
| 44 | Code |  |  |  | 4d → 16d |  | resources dungnm → hant21 |
| 45 | Peer code review |  |  |  | 4d → 16d |  | resources dungnm → hant21 |
| 46 | Prepare UT script |  |  |  | 4d → 16d |  | resources dungnm → hant21 |
| 47 | Perform UT and fix bug |  |  |  | 4d → 16d |  | resources dungnm → hant21 |
| 48 | **Trust District** | 2011-12-12 08:48 → 2011-12-05 08:48 (-7d) | 2011-12-16 08:48 → 2011-12-12 08:48 (-4d) | 4d → 5d | 4d → 16d |  | resources hant21 → phongtv |
| 49 | Class, Sequence digaram | 2011-12-12 08:48 → 2011-12-05 08:48 (-7d) | 2011-12-12 13:48 → 2011-12-05 13:48 (-7d) |  | 4d → 16d | 47 → 35SS | resources dungnm → phongtv |
| 50 | Prepare for Unit testing | 2011-12-12 13:48 → 2011-12-05 13:48 (-7d) | 2011-12-13 08:48 → 2011-12-06 08:48 (-7d) |  | 4d → 16d |  | resources dungnm → phongtv |
| 51 | Code | 2011-12-13 08:48 → 2011-12-06 08:48 (-7d) | 2011-12-14 13:48 → 2011-12-08 08:48 (-6d) | 1.5d → 2d | 4d → 16d |  | resources dungnm → phongtv |
| 52 | Peer code review | 2011-12-14 13:48 → 2011-12-08 08:48 (-6d) | 2011-12-15 08:48 → 2011-12-08 13:48 (-7d) |  | 4d → 16d |  | resources dungnm → phongtv |
| 53 | Prepare UT script | 2011-12-15 08:48 → 2011-12-08 13:48 (-7d) | 2011-12-15 13:48 → 2011-12-09 08:48 (-6d) |  | 4d → 16d |  | resources dungnm → phongtv |
| 54 | Perform UT and fix bug | 2011-12-15 13:48 → 2011-12-09 08:48 (-6d) | 2011-12-16 08:48 → 2011-12-12 08:48 (-4d) | 0.5d → 1d | 4d → 16d |  | resources dungnm → phongtv |
| 55 | **Gov Office** | 2011-12-16 08:48 → 2011-12-05 08:48 (-11d) | 2011-12-21 13:48 → 2011-12-12 08:48 (-9d) | 3.5d → 5d | 4d → 16d |  | resources hant21 → hungnm |
| 56 | Class, Sequence digaram | 2011-12-16 08:48 → 2011-12-05 08:48 (-11d) | 2011-12-16 13:48 → 2011-12-05 13:48 (-11d) |  | 4d → 16d | 54 → 35SS | resources dungnm → phongtv |
| 57 | Prepare for Unit testing | 2011-12-16 13:48 → 2011-12-05 13:48 (-11d) | 2011-12-19 08:48 → 2011-12-06 08:48 (-13d) |  | 4d → 16d |  | resources dungnm → phongtv |
| 58 | Code | 2011-12-19 08:48 → 2011-12-06 08:48 (-13d) | 2011-12-20 08:48 → 2011-12-08 08:48 (-12d) | 1d → 2d | 4d → 16d |  | resources dungnm → phongtv |
| 59 | Peer code review | 2011-12-20 08:48 → 2011-12-08 08:48 (-12d) | 2011-12-20 13:48 → 2011-12-08 13:48 (-12d) |  | 4d → 16d |  | resources dungnm → phongtv |
| 60 | Prepare UT script | 2011-12-20 13:48 → 2011-12-08 13:48 (-12d) | 2011-12-21 08:48 → 2011-12-09 08:48 (-12d) |  | 4d → 16d |  | resources dungnm → phongtv |
| 61 | Perform UT and fix bug | 2011-12-21 08:48 → 2011-12-09 08:48 (-12d) | 2011-12-21 13:48 → 2011-12-12 08:48 (-9d) | 0.5d → 1d | 4d → 16d |  | resources dungnm → phongtv |
| 62 | **Iteration 2 - Organization Maintenance** | 2011-12-05 08:48 → 2011-12-12 08:48 (+7d) | 2011-12-27 08:48 → 2011-12-16 08:48 (-11d) | 16d → 4d | 4d → 0d |  |  |
| 63 | **Organization** | 2011-12-05 08:48 → 2011-12-12 08:48 (+7d) | 2011-12-12 08:48 → 2011-12-16 08:48 (+4d) | 5d → 4d | 4d → 0d |  |  |
| 64 | Class, Sequence digaram | 2011-12-21 13:48 → 2011-12-12 08:48 (-9d) | 2011-12-22 08:48 → 2011-12-12 13:48 (-10d) |  | 4d → 0d | 61 → 40 |  |
| 65 | Prepare for Unit testing | 2011-12-22 08:48 → 2011-12-12 13:48 (-10d) | 2011-12-22 13:48 → 2011-12-13 08:48 (-9d) |  | 4d → 0d |  |  |
| 66 | Code | 2011-12-22 13:48 → 2011-12-13 08:48 (-9d) | 2011-12-23 13:48 → 2011-12-14 13:48 (-9d) | 1d → 1.5d | 4d → 0d |  |  |
| 67 | Peer code review | 2011-12-23 13:48 → 2011-12-14 13:48 (-9d) | 2011-12-26 08:48 → 2011-12-15 08:48 (-11d) |  | 4d → 0d |  |  |
| 68 | Prepare UT script | 2011-12-26 08:48 → 2011-12-15 08:48 (-11d) | 2011-12-26 13:48 → 2011-12-15 13:48 (-11d) |  | 4d → 0d |  |  |
| 69 | Perform UT and fix bug | 2011-12-26 13:48 → 2011-12-15 13:48 (-11d) | 2011-12-27 08:48 → 2011-12-16 08:48 (-11d) |  | 4d → 0d |  |  |
| 70 | **Supporting Materials** |  |  |  | 4d → 12d |  | resources dungnm → nhanld |
| 71 | Class, Sequence digaram | 2011-12-05 08:48 → 2011-12-12 08:48 (+7d) | 2011-12-05 13:48 → 2011-12-12 13:48 (+7d) |  | 7.5d → 12d | 100SS → 64SS | resources hungnm → nhanld |
| 72 | Prepare for Unit testing | 2011-12-05 13:48 → 2011-12-12 13:48 (+7d) | 2011-12-06 08:48 → 2011-12-13 08:48 (+7d) |  | 7.5d → 12d |  | resources hungnm → nhanld |
| 73 | Code | 2011-12-06 08:48 → 2011-12-13 08:48 (+7d) | 2011-12-08 08:48 → 2011-12-14 13:48 (+6d) | 2d → 1.5d | 7.5d → 12d |  | resources hungnm → nhanld |
| 74 | Peer code review | 2011-12-08 08:48 → 2011-12-14 13:48 (+6d) | 2011-12-08 13:48 → 2011-12-15 08:48 (+7d) |  | 7.5d → 12d |  | resources hungnm → nhanld |
| 75 | Prepare UT script | 2011-12-08 13:48 → 2011-12-15 08:48 (+7d) | 2011-12-09 08:48 → 2011-12-15 13:48 (+6d) |  | 7.5d → 12d |  | resources hungnm → nhanld |
| 76 | Perform UT and fix bug | 2011-12-09 08:48 → 2011-12-15 13:48 (+6d) | 2011-12-12 08:48 → 2011-12-16 08:48 (+4d) | 1d → 0.5d | 7.5d → 12d |  | resources hungnm → nhanld |
| 77 | **Directorates** | 2011-12-16 08:48 → 2011-12-12 08:48 (-4d) | 2011-12-21 13:48 → 2011-12-16 08:48 (-5d) | 3.5d → 4d | 4d → 12d |  | resources dungnm → hungnm |
| 78 | Class, Sequence digaram |  |  |  | 7.5d → 12d | 76 → 64SS |  |
| 84 | **Department** | 2011-12-21 13:48 → 2011-12-12 08:48 (-9d) | 2011-12-27 08:48 → 2011-12-16 08:48 (-11d) | 3.5d → 4d | 4d → 12d |  | resources dungnm → phongtv |
| 85 | Class, Sequence digaram | 2011-12-16 08:48 → 2011-12-12 08:48 (-4d) | 2011-12-16 13:48 → 2011-12-12 13:48 (-4d) |  | 7.5d → 12d | 83 → 64SS | resources hungnm → phongtv |
| 86 | Prepare for Unit testing | 2011-12-16 13:48 → 2011-12-12 13:48 (-4d) | 2011-12-19 08:48 → 2011-12-13 08:48 (-6d) |  | 7.5d → 12d |  | resources hungnm → phongtv |
| 87 | Code | 2011-12-19 08:48 → 2011-12-13 08:48 (-6d) | 2011-12-20 08:48 → 2011-12-14 13:48 (-6d) | 1d → 1.5d | 7.5d → 12d |  | resources hungnm → phongtv |
| 88 | Peer code review | 2011-12-20 08:48 → 2011-12-14 13:48 (-6d) | 2011-12-20 13:48 → 2011-12-15 08:48 (-5d) |  | 7.5d → 12d |  | resources hungnm → phongtv |
| 89 | Prepare UT script | 2011-12-20 13:48 → 2011-12-15 08:48 (-5d) | 2011-12-21 08:48 → 2011-12-15 13:48 (-6d) |  | 7.5d → 12d |  | resources hungnm → phongtv |
| 90 | Perform UT and fix bug | 2011-12-21 08:48 → 2011-12-15 13:48 (-6d) | 2011-12-21 13:48 → 2011-12-16 08:48 (-5d) |  | 7.5d → 12d |  | resources hungnm → phongtv |
| 91 | **Team** | 2011-12-05 08:48 → 2011-12-12 08:48 (+7d) | 2011-12-12 08:48 → 2011-12-16 08:48 (+4d) | 5d → 4d | 7.5d → 12d |  | resources hungnm → hant21 |
| 92 | Class, Sequence digaram | 2011-12-05 08:48 → 2011-12-12 08:48 (+7d) | 2011-12-05 13:48 → 2011-12-12 13:48 (+7d) |  | 4d → 12d | 100SS → 64SS |  |
| 93 | Prepare for Unit testing | 2011-12-05 13:48 → 2011-12-12 13:48 (+7d) | 2011-12-06 08:48 → 2011-12-13 08:48 (+7d) |  | 4d → 12d |  |  |
| 94 | Code | 2011-12-06 08:48 → 2011-12-13 08:48 (+7d) | 2011-12-08 08:48 → 2011-12-14 13:48 (+6d) | 2d → 1.5d | 4d → 12d |  |  |
| 95 | Peer code review | 2011-12-08 08:48 → 2011-12-14 13:48 (+6d) | 2011-12-08 13:48 → 2011-12-15 08:48 (+7d) |  | 4d → 12d |  |  |
| 96 | Prepare UT script | 2011-12-08 13:48 → 2011-12-15 08:48 (+7d) | 2011-12-09 08:48 → 2011-12-15 13:48 (+6d) |  | 4d → 12d |  |  |
| 97 | Perform UT and fix bug | 2011-12-09 08:48 → 2011-12-15 13:48 (+6d) | 2011-12-12 08:48 → 2011-12-16 08:48 (+4d) | 1d → 0.5d | 4d → 12d |  |  |
| 98 | **Iteration 3 - Login, menu, address lookup, addresslookup,Services, Programme** | 2011-12-05 08:48 → 2011-12-15 13:48 (+10d) | 2011-12-21 13:48 → 2012-01-03 08:48 (+13d) |  |  |  | was named Iteration 1 - Login, menu, contact, addresslookup |
| 99 | **Logon-Logout, menu** | 2011-12-05 08:48 → 2011-12-16 08:48 (+11d) | 2011-12-12 08:48 → 2011-12-22 08:48 (+10d) | 5d → 4d |  |  |  |
| 100 | Class, Sequence digaram | 2011-12-05 08:48 → 2011-12-16 08:48 (+11d) | 2011-12-05 13:48 → 2011-12-16 13:48 (+11d) |  |  | 31 → 69 |  |
| 101 | Prepare for Unit testing | 2011-12-05 13:48 → 2011-12-16 13:48 (+11d) | 2011-12-06 08:48 → 2011-12-19 08:48 (+13d) |  | 7.5d → 0d |  |  |
| 102 | Code | 2011-12-06 08:48 → 2011-12-19 08:48 (+13d) | 2011-12-08 08:48 → 2011-12-20 13:48 (+12d) | 2d → 1.5d | 7.5d → 0d |  |  |
| 103 | Peer code review | 2011-12-08 08:48 → 2011-12-20 13:48 (+12d) | 2011-12-08 13:48 → 2011-12-21 08:48 (+13d) |  | 7.5d → 0d |  |  |
| 104 | Prepare UT script | 2011-12-08 13:48 → 2011-12-21 08:48 (+13d) | 2011-12-09 08:48 → 2011-12-21 13:48 (+12d) |  | 7.5d → 0d |  |  |
| 105 | Perform UT and fix bug | 2011-12-09 08:48 → 2011-12-21 13:48 (+12d) | 2011-12-12 08:48 → 2011-12-22 08:48 (+10d) | 1d → 0.5d | 7.5d → 0d |  |  |
| 106 | **Type of Business lookup** | 2011-12-21 13:48 → 2011-12-15 13:48 (-6d) | 2011-12-27 08:48 → 2011-12-21 13:48 (-6d) | 3.5d → 4d | 4d → 8.5d |  |  |
| 107 | Class, Sequence digaram | 2011-12-12 08:48 → 2011-12-15 13:48 (+3d) | 2011-12-12 13:48 → 2011-12-16 08:48 (+4d) |  | 4d → 8.5d | 97 → 69SS |  |

| ID | Task | Start | Finish | Duration | Total float | Predecessors | Other |
| --- | --- | --- | --- | --- | --- | --- | --- |
| 108 | Prepare for Unit testing | 2011-12-12 13:48 → 2011-12-16 08:48 (+4d) | 2011-12-13 08:48 → 2011-12-16 13:48 (+3d) |  | 4d → 8.5d |  |  |
| 109 | Code | 2011-12-13 08:48 → 2011-12-16 13:48 (+3d) | 2011-12-14 13:48 → 2011-12-20 08:48 (+6d) |  | 4d → 8.5d |  |  |
| 110 | Peer code review | 2011-12-14 13:48 → 2011-12-20 08:48 (+6d) | 2011-12-15 08:48 → 2011-12-20 13:48 (+5d) |  | 4d → 8.5d |  |  |
| 111 | Prepare UT script | 2011-12-15 08:48 → 2011-12-20 13:48 (+5d) | 2011-12-15 13:48 → 2011-12-21 08:48 (+6d) |  | 4d → 8.5d |  |  |
| 112 | Perform UT and fix bug | 2011-12-15 13:48 → 2011-12-21 08:48 (+6d) | 2011-12-16 08:48 → 2011-12-21 13:48 (+5d) |  | 4d → 8.5d |  |  |
| 113 | **Address lookup** | 2011-12-16 08:48 → 2011-12-15 13:48 (-1d) |  | 3.5d → 4d | 7.5d → 8.5d |  |  |
| 114 | Class, Sequence digaram | 2011-12-16 08:48 → 2011-12-15 13:48 (-1d) | 2011-12-16 13:48 → 2011-12-16 08:48 |  | 7.5d → 8.5d | 40 → 69SS |  |
| 115 | Prepare for Unit testing | 2011-12-16 13:48 → 2011-12-16 08:48 | 2011-12-19 08:48 → 2011-12-16 13:48 (-3d) |  | 7.5d → 8.5d |  |  |
| 116 | Code | 2011-12-19 08:48 → 2011-12-16 13:48 (-3d) |  | 1d → 1.5d | 7.5d → 8.5d |  |  |
| 120 | **Service** | 2011-12-12 08:48 → 2011-12-15 13:48 (+3d) | 2011-12-16 08:48 → 2011-12-21 13:48 (+5d) |  | 7.5d → 8.5d |  |  |
| 121 | Class, Sequence digaram | 2011-12-16 08:48 → 2011-12-15 13:48 (-1d) | 2011-12-16 13:48 → 2011-12-16 08:48 |  | 4d → 8.5d | 112 → 69SS | resources hant21 → hungnm |
| 122 | Prepare for Unit testing | 2011-12-16 13:48 → 2011-12-16 08:48 | 2011-12-19 08:48 → 2011-12-16 13:48 (-3d) |  | 4d → 8.5d |  | resources hant21 → hungnm |
| 123 | Code | 2011-12-19 08:48 → 2011-12-16 13:48 (-3d) |  | 1d → 1.5d | 4d → 8.5d |  | resources hant21 → hungnm |
| 124 | Peer code review |  |  |  | 4d → 8.5d |  | resources hant21 → hungnm |
| 125 | Prepare UT script |  |  |  | 4d → 8.5d |  | resources hant21 → hungnm |
| 126 | Perform UT and fix bug |  |  |  | 4d → 8.5d |  | resources hant21 → hungnm |
| 127 | **Programme** | 2011-12-16 08:48 → 2011-12-15 13:48 (-1d) |  | 3.5d → 4d | 7.5d → 8.5d |  |  |
| 128 | Class, Sequence digaram | 2011-12-21 13:48 → 2011-12-15 13:48 (-6d) | 2011-12-22 08:48 → 2011-12-16 08:48 (-6d) |  | 4d → 8.5d | 126 → 69SS | resources hant21 → hungnm |
| 129 | Prepare for Unit testing | 2011-12-22 08:48 → 2011-12-16 08:48 (-6d) | 2011-12-22 13:48 → 2011-12-16 13:48 (-6d) |  | 4d → 8.5d |  | resources hant21 → hungnm |
| 130 | Code | 2011-12-22 13:48 → 2011-12-16 13:48 (-6d) | 2011-12-23 13:48 → 2011-12-20 08:48 (-3d) | 1d → 1.5d | 4d → 8.5d |  | resources hant21 → hungnm |
| 131 | Peer code review | 2011-12-23 13:48 → 2011-12-20 08:48 (-3d) | 2011-12-26 08:48 → 2011-12-20 13:48 (-6d) |  | 4d → 8.5d |  | resources hant21 → hungnm |
| 132 | Prepare UT script | 2011-12-26 08:48 → 2011-12-20 13:48 (-6d) | 2011-12-26 13:48 → 2011-12-21 08:48 (-5d) |  | 4d → 8.5d |  | resources hant21 → hungnm |
| 133 | Perform UT and fix bug | 2011-12-26 13:48 → 2011-12-21 08:48 (-5d) | 2011-12-27 08:48 → 2011-12-21 13:48 (-6d) |  | 4d → 8.5d |  | resources hant21 → hungnm |
| 134 | **Iteration 4 -Premise, Facility, Volunteering, Minor Work Projects** | 2011-12-05 08:48 → 2011-12-22 08:48 (+17d) | 2011-12-27 08:48 → 2011-12-28 08:48 (+1d) | 16d → 4d |  |  | was named Iteration 5 -Premise, Facility, Volunteering, Minor Work Projects |
| 135 | **Premise** | 2011-12-05 08:48 → 2011-12-22 08:48 (+17d) | 2011-12-12 08:48 → 2011-12-28 08:48 (+16d) | 5d → 4d |  |  | resources phongtv → nhanld; dungnm |
| 136 | Class, Sequence digaram | 2011-12-05 08:48 → 2011-12-22 08:48 (+17d) | 2011-12-05 13:48 → 2011-12-22 13:48 (+17d) |  |  | 100SS → 105 | resources phongtv → nhanld; dungnm |
| 137 | Prepare for Unit testing | 2011-12-05 13:48 → 2011-12-22 13:48 (+17d) | 2011-12-06 08:48 → 2011-12-23 08:48 (+17d) |  | 0d → 4d |  | resources phongtv → nhanld; dungnm |
| 138 | Code | 2011-12-06 08:48 → 2011-12-23 08:48 (+17d) | 2011-12-08 08:48 → 2011-12-26 13:48 (+18d) | 2d → 1.5d | 0d → 4d |  | resources phongtv → nhanld; dungnm |
| 139 | Peer code review | 2011-12-08 08:48 → 2011-12-26 13:48 (+18d) | 2011-12-08 13:48 → 2011-12-27 08:48 (+19d) |  | 0d → 4d |  | resources phongtv → nhanld; dungnm |
| 140 | Prepare UT script | 2011-12-08 13:48 → 2011-12-27 08:48 (+19d) | 2011-12-09 08:48 → 2011-12-27 13:48 (+18d) |  | 0d → 4d |  | resources phongtv → nhanld; dungnm |
| 141 | Perform UT and fix bug | 2011-12-09 08:48 → 2011-12-27 13:48 (+18d) | 2011-12-12 08:48 → 2011-12-28 08:48 (+16d) | 1d → 0.5d | 0d → 4d |  | resources phongtv → nhanld; dungnm |
| 142 | **Facility** | 2011-12-12 08:48 → 2011-12-22 08:48 (+10d) | 2011-12-16 08:48 → 2011-12-28 08:48 (+12d) |  | 0d → 4d |  | resources phongtv → hungnm |
| 143 | Class, Sequence digaram | 2011-12-12 08:48 → 2011-12-22 08:48 (+10d) | 2011-12-12 13:48 → 2011-12-22 13:48 (+10d) |  | 0d → 4d | 141 → 136SS | resources phongtv → hungnm |
| 144 | Prepare for Unit testing | 2011-12-12 13:48 → 2011-12-22 13:48 (+10d) | 2011-12-13 08:48 → 2011-12-23 08:48 (+10d) |  | 0d → 4d |  | resources phongtv → hungnm |
| 145 | Code | 2011-12-13 08:48 → 2011-12-23 08:48 (+10d) | 2011-12-14 13:48 → 2011-12-26 13:48 (+12d) |  | 0d → 4d |  | resources phongtv → hungnm |
| 146 | Peer code review | 2011-12-14 13:48 → 2011-12-26 13:48 (+12d) | 2011-12-15 08:48 → 2011-12-27 08:48 (+12d) |  | 0d → 4d |  | resources phongtv → hungnm |
| 147 | Prepare UT script | 2011-12-15 08:48 → 2011-12-27 08:48 (+12d) | 2011-12-15 13:48 → 2011-12-27 13:48 (+12d) |  | 0d → 4d |  | resources phongtv → hungnm |
| 148 | Perform UT and fix bug | 2011-12-15 13:48 → 2011-12-27 13:48 (+12d) | 2011-12-16 08:48 → 2011-12-28 08:48 (+12d) |  | 0d → 4d |  | resources phongtv → hungnm |
| 149 | **Volunteering** | 2011-12-16 08:48 → 2011-12-22 08:48 (+6d) | 2011-12-21 13:48 → 2011-12-28 08:48 (+7d) | 3.5d → 4d | 0d → 4d |  |  |
| 150 | Class, Sequence digaram | 2011-12-16 08:48 → 2011-12-22 08:48 (+6d) | 2011-12-16 13:48 → 2011-12-22 13:48 (+6d) |  | 0d → 4d | 148 → 136SS |  |
| 151 | Prepare for Unit testing | 2011-12-16 13:48 → 2011-12-22 13:48 (+6d) | 2011-12-19 08:48 → 2011-12-23 08:48 (+4d) |  | 0d → 4d |  |  |
| 152 | Code | 2011-12-19 08:48 → 2011-12-23 08:48 (+4d) | 2011-12-20 08:48 → 2011-12-26 13:48 (+6d) | 1d → 1.5d | 0d → 4d |  |  |
| 153 | Peer code review | 2011-12-20 08:48 → 2011-12-26 13:48 (+6d) | 2011-12-20 13:48 → 2011-12-27 08:48 (+7d) |  | 0d → 4d |  |  |
| 154 | Prepare UT script | 2011-12-20 13:48 → 2011-12-27 08:48 (+7d) | 2011-12-21 08:48 → 2011-12-27 13:48 (+6d) |  | 0d → 4d |  |  |
| 155 | Perform UT and fix bug | 2011-12-21 08:48 → 2011-12-27 13:48 (+6d) | 2011-12-21 13:48 → 2011-12-28 08:48 (+7d) |  | 0d → 4d |  |  |
| 156 | **Minor Work Projects** | 2011-12-21 13:48 → 2011-12-22 08:48 (+1d) | 2011-12-27 08:48 → 2011-12-28 08:48 (+1d) | 3.5d → 4d |  |  | resources phongtv → hant21 |
| 157 | Class, Sequence digaram | 2011-12-21 13:48 → 2011-12-22 08:48 (+1d) | 2011-12-22 08:48 → 2011-12-22 13:48 |  |  | 155 → 136SS | resources phongtv → hant21 |
| 158 | Prepare for Unit testing | 2011-12-22 08:48 → 2011-12-22 13:48 | 2011-12-22 13:48 → 2011-12-23 08:48 (+1d) |  |  |  | resources phongtv → hant21 |
| 159 | Code | 2011-12-22 13:48 → 2011-12-23 08:48 (+1d) | 2011-12-23 13:48 → 2011-12-26 13:48 (+3d) | 1d → 1.5d |  |  | resources phongtv → hant21 |
| 160 | Peer code review | 2011-12-23 13:48 → 2011-12-26 13:48 (+3d) | 2011-12-26 08:48 → 2011-12-27 08:48 (+1d) |  |  |  | resources phongtv → hant21 |
| 161 | Prepare UT script | 2011-12-26 08:48 → 2011-12-27 08:48 (+1d) | 2011-12-26 13:48 → 2011-12-27 13:48 (+1d) |  |  |  | resources phongtv → hant21 |
| 162 | Perform UT and fix bug | 2011-12-26 13:48 → 2011-12-27 13:48 (+1d) | 2011-12-27 08:48 → 2011-12-28 08:48 (+1d) |  |  |  | resources phongtv → hant21 |
| 164 | **Integrate modules** | 2011-12-27 08:48 → 2011-12-28 08:48 (+1d) | 2012-01-02 08:48 → 2012-01-03 08:48 (+1d) |  |  |  |  |
| 165 | Merge modules | 2011-12-27 08:48 → 2011-12-28 08:48 (+1d) | 2011-12-28 08:48 → 2011-12-29 08:48 (+1d) |  |  |  |  |
| 166 | System test | 2011-12-28 08:48 → 2011-12-29 08:48 (+1d) | 2011-12-30 08:48 → 2012-01-02 08:48 (+3d) |  |  |  |  |
| 167 | **Help document** | 2011-12-30 08:48 → 2012-01-02 08:48 (+3d) | 2012-01-02 08:48 → 2012-01-03 08:48 (+1d) |  |  |  |  |
| 168 | Write help documents | 2011-12-30 08:48 → 2012-01-02 08:48 (+3d) | 2012-01-02 08:48 → 2012-01-03 08:48 (+1d) |  |  |  |  |
